State,% Complete,Task Name,Duration,Start,Finish,Assigned To,Predecessors,Comments,Cost (for OH),Cost (no OH),Row,Parent
Green,63%,Contract Completion,712d,11/1/2019,7/25/2022,,,,,,1,#NO MATCH
Green,83%,1.0 Program Management,673d,11/1/2019,5/31/2022,,,,,,2,1
Green,65%,Undistibuted Labor,348d,9/1/2020,12/30/2021,,,,,,3,2
Green,99%,Project Reviews,659d,11/1/2019,5/11/2022,,,,,,4,2
Gray,100%,CDR Readiness Review,1d,1/25/2021,1/25/2021,"Brandon Kirkman, Joe Zimo",,,,,5,4
Gray,100%,Internal Mission Status Review 1,1d,11/1/2019,11/1/2019,"Brandon Kirkman, Joe Zimo, Michael Provenzano",,,,,6,4
Gray,100%,Internal Mission Status Review 2,1d,3/6/2020,3/6/2020,"Brandon Kirkman, Joe Zimo, Michael Provenzano",,,,,7,4
Gray,100%,System Requirements Review,1d,7/1/2020,7/1/2020,"Brandon Kirkman, Joe Zimo, Michael Provenzano",,,,,8,4
Gray,100%,Internal PDR,0.5d,8/21/2020,8/21/2020,"Brandon Kirkman, Joe Zimo, Michael Provenzano",,,,,9,4
Gray,100%,SRR,211d,11/1/2019,8/21/2020,,,,,,10,4
Gray,100%,Tasks - See archived schedule (6 FTEs),211d,11/1/2019,8/21/2020,,,,,,11,10
Gray,100%,PDR,211d,11/1/2019,8/21/2020,,,,,,12,4
Gray,100%,Tasks - See archived schedule (6 FTEs),211d,11/1/2019,8/21/2020,,,,,,13,12
Gray,100%,CDR: Critical Design Review,2d,3/4/2021,3/5/2021,"Brandon Kirkman, Joe Zimo, Michael Provenzano",,,,,14,4
Gray,100%,CDR - DELTA,26.5d,9/14/2021,10/20/2021,"Brandon Kirkman, Joe Zimo, Michael Provenzano",,,,,15,4
Gray,100%,"Develop Delta CDR Slides for Internal Review, Addressing RFA Actions on RFA Action Sheet",20d,9/14/2021,10/11/2021,,17FS -20d,,,,16,15
Gray,100%,Delta CDR Slides Ready for Review,0.5d,10/11/2021,10/11/2021,,18FS -2d,,,,17,15
Gray,100%,Delta CDR Slides Internal Review,0.5d,10/13/2021,10/13/2021,,19FS -5d,,,,18,15
Gray,100%,Delta CDR Slides Complete,0.5d,10/19/2021,10/19/2021,,20FS -1d,,,,19,15
Gray,100%,Present DeltaCDR,0.5d,10/20/2021,10/20/2021,,,,,,20,15
Gray,100%,CDR Readiness Review Slides,1d,1/21/2021,1/21/2021,Joe Zimo,,,,,21,4
Gray,100%,CDR RFAs,30d,3/15/2021,4/23/2021,,,,,,22,4
Gray,100%,Organize and prioritize RFAs,10d,3/15/2021,3/26/2021,Joe Zimo,14FS +5d,,,,23,22
Gray,100%,RFA-01: Clarify Technical Standards,20d,3/29/2021,4/23/2021,Joe Zimo,23,,,,24,22
Gray,100%,RFA-02: Document Mobility Risk Assessment,20d,3/29/2021,4/23/2021,"Daniel Scher, Joe Zimo",23,,,,25,22
Gray,100%,RFA-03: Mobility Performance Testing,20d,3/29/2021,4/23/2021,"Joe Zimo, Warren Whittaker",23,,,,26,22
Gray,100%,RFA-04: Navigation Compatibility Validation,20d,3/29/2021,4/23/2021,"Joe Zimo, tenzinc@andrew.cmu.edu",23,,,,27,22
Gray,100%,RFA-05: Mature SM&A w/Quality Standards,20d,3/29/2021,4/23/2021,"Brandon Kirkman, Joe Zimo",23,,,,28,22
Gray,100%,RFA-06: Publish natural environment definition document,20d,3/29/2021,4/23/2021,Joe Zimo,23,,,,29,22
Gray,100%,RFA-07 Lander Compatibility Test Plan (electronics),20d,3/29/2021,4/23/2021,"Joe Zimo, red@cmu.edu",23,,,,30,22
Gray,100%,RFA-08: Improve Requirements Tracability,20d,3/29/2021,4/23/2021,"Joe Zimo, Jorge Vasquez Albornoz",23,,,,31,22
Gray,100%,RFA-09: Mature Lander Interface,20d,3/29/2021,4/23/2021,Joe Zimo,23,,,,32,22
Gray,100%,RFA-10: Clarify Thermal Analysis Assumptions & Validation,20d,3/29/2021,4/23/2021,"Joe Zimo, Paulo R.M.Fisch",23,,,,33,22
Gray,100%,RFA-11: Explore Dust degradation of photovoltaic output,20d,3/29/2021,4/23/2021,"James Teza, Joe Zimo",23,,,,34,22
Gray,100%,RFA-12: Evaluate Heritage/COTS parts for lunar environment.,20d,3/29/2021,4/23/2021,"Joe Zimo, Tim Angert",23,,,,35,22
Gray,100%,KDP (Key Decision Point - NASA Standard),1d,6/16/2021,6/16/2021,"Brandon Kirkman, Joe Zimo, Michael Provenzano",,,,,36,4
Gray,0%,SIR/AR: System Integration/Acceptance Review,1d,5/11/2022,5/11/2022,"Brandon Kirkman, Joe Zimo, Michael Provenzano",1409FS -23d,Told NASA 5/1/22.,,,37,4
Green,77%,Risk Management,583d,1/28/2020,4/21/2022,,,,,,38,2
Gray,100%,Project Management Plan,30d,12/4/2020,1/15/2021,Brandon Kirkman,9FS +75d,,,,39,38
Gray,100%,Risk Management Plan for CDR,25d,1/4/2021,2/5/2021,"Brandon Kirkman, Joe Zimo",14SF -18d,,,,40,38
Gray,0%,Risk Management Plan for SIR,25d,3/18/2022,4/21/2022,"Brandon Kirkman, Joe Zimo",37SF -13d,,,,41,38
Gray,100%,Project Management Approval/Slides,6d,1/15/2021,1/25/2021,"Brandon Kirkman, Joe Zimo",39,,,,42,38
Gray,100%,Risk Management for PDR,25d,1/28/2020,3/2/2020,,,,,,43,38
Green,93%,Weekly Bullitin & IWGs,249.5d,1/5/2021,12/20/2021,,,,,,44,2
Gray,100%,Weekly Bulletin & IWGs 2021 W1,3d,1/5/2021,1/8/2021,Joe Zimo,9FS +97d,,,,45,44
Gray,100%,Weekly Bulletin & IWGs 2021 W2,5d,1/8/2021,1/15/2021,Joe Zimo,45,,,,46,44
Gray,100%,Weekly Bulletin & IWGs 2021 W3,5d,1/15/2021,1/22/2021,Joe Zimo,46,,,,47,44
Gray,100%,Weekly Bulletin & IWGs 2021 W4,5d,1/22/2021,1/29/2021,Joe Zimo,47,,,,48,44
Gray,100%,Weekly Bulletin & IWGs 2021 W5,5d,1/29/2021,2/5/2021,Joe Zimo,48,,,,49,44
Gray,100%,Weekly Bulletin & IWGs 2021 W6,5d,2/5/2021,2/12/2021,Joe Zimo,49,,,,50,44
Gray,100%,Weekly Bulletin & IWGs 2021 W7,5d,2/12/2021,2/19/2021,Joe Zimo,50,,,,51,44
Gray,100%,Weekly Bulletin & IWGs 2021 W8,5d,2/19/2021,2/26/2021,Joe Zimo,51,,,,52,44
Gray,100%,Weekly Bulletin & IWGs 2021 W9,5d,2/26/2021,3/5/2021,Joe Zimo,52,,,,53,44
Gray,100%,Weekly Bulletin & IWGs 2021 W10,5d,3/5/2021,3/12/2021,Joe Zimo,53,,,,54,44
Gray,100%,Weekly Bulletin & IWGs 2021 W11,5d,3/12/2021,3/19/2021,Joe Zimo,54,,,,55,44
Gray,100%,Weekly Bulletin & IWGs 2021 W12,5d,3/19/2021,3/26/2021,Joe Zimo,55,,,,56,44
Gray,100%,Weekly Bulletin & IWGs 2021 W13,5d,3/26/2021,4/2/2021,Joe Zimo,56,,,,57,44
Gray,100%,Weekly Bulletin & IWGs 2021 W14,5d,4/2/2021,4/9/2021,Joe Zimo,57,,,,58,44
Gray,100%,Weekly Bulletin & IWGs 2021 W15,5d,4/9/2021,4/16/2021,Joe Zimo,58,,,,59,44
Gray,100%,Weekly Bulletin & IWGs 2021 W16,5d,4/16/2021,4/23/2021,Joe Zimo,59,,,,60,44
Gray,100%,Weekly Bulletin & IWGs 2021 W17,5d,4/23/2021,4/30/2021,Joe Zimo,60,,,,61,44
Gray,100%,Weekly Bulletin & IWGs 2021 W18,5d,4/30/2021,5/7/2021,Joe Zimo,61,,,,62,44
Gray,100%,Weekly Bulletin & IWGs 2021 W19,5d,5/7/2021,5/14/2021,Joe Zimo,62,,,,63,44
Gray,100%,Weekly Bulletin & IWGs 2021 W20,5d,5/14/2021,5/21/2021,Joe Zimo,63,,,,64,44
Gray,100%,Weekly Bulletin & IWGs 2021 W21,5d,5/21/2021,5/28/2021,Joe Zimo,64,,,,65,44
Gray,100%,Weekly Bulletin & IWGs 2021 W22,5d,5/28/2021,6/4/2021,Joe Zimo,65,,,,66,44
Gray,100%,Weekly Bulletin & IWGs 2021 W23,5d,6/4/2021,6/11/2021,Joe Zimo,66,,,,67,44
Gray,100%,Weekly Bulletin & IWGs 2021 W24,5d,6/11/2021,6/18/2021,Joe Zimo,67,,,,68,44
Gray,100%,Weekly Bulletin & IWGs 2021 W25,5d,6/18/2021,6/25/2021,Joe Zimo,68,,,,69,44
Gray,100%,Weekly Bulletin & IWGs 2021 W26,5d,6/25/2021,7/2/2021,Joe Zimo,69,,,,70,44
Gray,100%,Weekly Bulletin & IWGs 2021 W27,5d,7/2/2021,7/9/2021,Joe Zimo,70,,,,71,44
Gray,100%,Weekly Bulletin & IWGs 2021 W28,5d,7/9/2021,7/16/2021,Joe Zimo,71,,,,72,44
Gray,100%,Weekly Bulletin & IWGs 2021 W29,5d,7/16/2021,7/23/2021,Joe Zimo,72,,,,73,44
Gray,100%,Weekly Bulletin & IWGs 2021 W30,5d,7/23/2021,7/30/2021,Joe Zimo,73,,,,74,44
Gray,100%,Weekly Bulletin & IWGs 2021 W31,5d,7/30/2021,8/6/2021,Joe Zimo,74,,,,75,44
Gray,100%,Weekly Bulletin & IWGs 2021 W32,5d,8/6/2021,8/13/2021,Joe Zimo,75,,,,76,44
Gray,100%,Weekly Bulletin & IWGs 2021 W33,5d,8/13/2021,8/20/2021,Joe Zimo,76,,,,77,44
Gray,100%,Weekly Bulletin & IWGs 2021 W34,5d,8/20/2021,8/27/2021,Joe Zimo,77,,,,78,44
Gray,100%,Weekly Bulletin & IWGs 2021 W35,5d,8/31/2021,9/6/2021,Joe Zimo,,,,,79,44
Gray,100%,Weekly Bulletin & IWGs 2021 W36,5d,9/7/2021,9/13/2021,Joe Zimo,79,,,,80,44
Gray,100%,Weekly Bulletin & IWGs 2021 W37,5d,9/14/2021,9/20/2021,Joe Zimo,80,,,,81,44
Gray,100%,Weekly Bulletin & IWGs 2021 W38,5d,9/21/2021,9/27/2021,Joe Zimo,81,,,,82,44
Gray,100%,Weekly Bulletin & IWGs 2021 W39,5d,9/28/2021,10/4/2021,Joe Zimo,82,,,,83,44
Gray,100%,Weekly Bulletin & IWGs 2021 W40,5d,10/5/2021,10/11/2021,Joe Zimo,83,,,,84,44
Gray,100%,Weekly Bulletin & IWGs 2021 W41,5d,10/12/2021,10/18/2021,Joe Zimo,84,,,,85,44
Gray,100%,Weekly Bulletin & IWGs 2021 W42,5d,10/19/2021,10/25/2021,Joe Zimo,85,,,,86,44
Gray,100%,Weekly Bulletin & IWGs 2021 W43,5d,10/26/2021,11/1/2021,Joe Zimo,86,,,,87,44
Gray,100%,Weekly Bulletin & IWGs 2021 W44,5d,11/2/2021,11/8/2021,Joe Zimo,87,,,,88,44
Gray,100%,Weekly Bulletin & IWGs 2021 W45,5d,11/9/2021,11/15/2021,Joe Zimo,88,,,,89,44
Red,0%,Weekly Bulletin & IWGs 2021 W46,5d,11/16/2021,11/22/2021,Joe Zimo,89,,,,90,44
Green,0%,Weekly Bulletin & IWGs 2021 W47,5d,11/23/2021,11/29/2021,Joe Zimo,90,,,,91,44
Yellow,0%,Weekly Bulletin & IWGs 2021 W48,5d,11/30/2021,12/6/2021,Joe Zimo,91,,,,92,44
Yellow,0%,Weekly Bulletin & IWGs 2021 W49,5d,12/7/2021,12/13/2021,Joe Zimo,92,,,,93,44
Gray,0%,Weekly Bulletin & IWGs 2021 W50,5d,12/14/2021,12/20/2021,Joe Zimo,93,,,,94,44
Gray,100%,Masten & NSS IWGS (biweekly),108d,1/5/2021,6/4/2021,,,,,,95,44
Gray,100%,Masten & NSS IWG 2021 W1&2,8d,1/5/2021,1/15/2021,Joe Zimo,9FS +97d,,,,96,95
Gray,100%,Masten & NSS IWG 2021 W3&4,10d,1/15/2021,1/29/2021,Joe Zimo,96,,,,97,95
Gray,100%,Masten & NSS IWG 2021 W5&6,10d,1/29/2021,2/12/2021,Joe Zimo,97,,,,98,95
Gray,100%,Masten & NSS IWG 2021 W7&8,10d,2/12/2021,2/26/2021,Joe Zimo,98,,,,99,95
Gray,100%,Masten & NSS IWG 2021 W9&10,10d,2/26/2021,3/12/2021,Joe Zimo,99,,,,100,95
Gray,100%,Masten & NSS IWG 2021 W11&12,10d,3/12/2021,3/26/2021,Joe Zimo,100,,,,101,95
Gray,100%,Masten & NSS IWG 2021 W13&14,10d,3/26/2021,4/9/2021,Joe Zimo,101,,,,102,95
Gray,100%,Masten & NSS IWG 2021 W15&16,10d,4/9/2021,4/23/2021,Joe Zimo,102,,,,103,95
Gray,100%,Masten & NSS IWG 2021 W17&18,10d,4/23/2021,5/7/2021,Joe Zimo,103,,,,104,95
Gray,100%,Masten & NSS IWG 2021 W19&20,10d,5/7/2021,5/21/2021,Joe Zimo,104,,,,105,95
Gray,100%,Masten & NSS IWG 2021 W21&22,10d,5/21/2021,6/4/2021,Joe Zimo,105,,,,106,95
Gray,100%,Create & Present Monthly DOC/PPT,175.5d,1/20/2021,9/22/2021,,,,,,107,2
Gray,100%,Create & Present Monthly DOC/PPT - 2021 Jan,5d,1/20/2021,1/26/2021,Joe Zimo,168FS +7d,,,,108,107
Gray,100%,Create & Present Monthly DOC/PPT - 2021 Feb,5d,2/19/2021,2/26/2021,Joe Zimo,169FS +7d,,,,109,107
Gray,100%,Create & Present Monthly DOC/PPT - 2021 Mar,5d,3/19/2021,3/26/2021,Joe Zimo,170FS +7d,,,,110,107
Gray,100%,Create & Present Monthly DOC/PPT - 2021 Apr,5d,4/21/2021,4/27/2021,Joe Zimo,171FS +7d,,,,111,107
Gray,100%,Create & Present Monthly DOC/PPT - 2021 May,5d,5/19/2021,5/26/2021,Joe Zimo,172FS +7d,,,,112,107
Gray,100%,Create & Present Monthly DOC/PPT - 2021 June,5d,6/21/2021,6/28/2021,Joe Zimo,173FS +7d,,,,113,107
Gray,100%,Create & Present Monthly DOC/PPT - 2021 July,5d,7/21/2021,7/27/2021,Joe Zimo,174FS +7d,,,,114,107
Gray,100%,Create & Present Monthly DOC/PPT - 2021 Aug,5d,8/13/2021,8/20/2021,Joe Zimo,175FS +3d,10-15th,,,115,107
Gray,100%,Create & Present Monthly DOC/PPT - 2021 Sept,5d,9/15/2021,9/22/2021,Joe Zimo,176FS +3d,,,,116,107
Green,96%,NASA 533 Report,547d,12/5/2019,1/7/2022,,,,,,117,2
Gray,100%,NASA 533 - 2019/11,5d,12/5/2019,12/11/2019,Michael Provenzano,,$0  due 12/5/2019,,,118,117
Gray,100%,NASA 533 - 2019/12,5d,1/5/2020,1/9/2020,Michael Provenzano,,$121445.99  due 1/5/2020,,,119,117
Gray,100%,NASA 533 - 2020/1,5d,2/5/2020,2/11/2020,Michael Provenzano,,$142106.7  due 2/5/2020,,,120,117
Gray,100%,NASA 533 - 2020/2,5d,3/5/2020,3/11/2020,Michael Provenzano,,$136532.57  due 3/5/2020,,,121,117
Gray,100%,NASA 533 - 2020/3,5d,4/5/2020,4/9/2020,Michael Provenzano,,$20925.91  due 4/5/2020,,,122,117
Gray,100%,NASA 533 - 2020/4,5d,5/5/2020,5/11/2020,Michael Provenzano,,$14252.26  due 5/5/2020,,,123,117
Gray,100%,NASA 533 - 2020/5,5d,6/5/2020,6/11/2020,Michael Provenzano,,$15563.39  due 6/5/2020,,,124,117
Gray,100%,NASA 533 - 2020/6,5d,7/5/2020,7/9/2020,Michael Provenzano,,$12756.53  due 7/5/2020,,,125,117
Gray,100%,NASA 533 - 2020/7,5d,8/5/2020,8/11/2020,Michael Provenzano,,$14638.18  due 8/5/2020,,,126,117
Gray,100%,NASA 533 - 2020/8,5d,9/5/2020,9/10/2020,Michael Provenzano,,$262781.37  due 9/5/2020,,,127,117
Gray,100%,NASA 533 - 2020/9,5d,10/5/2020,10/9/2020,Michael Provenzano,,$256168.76  due 10/5/2020,,,128,117
Gray,100%,NASA 533 - 2020/10,5d,11/5/2020,11/11/2020,Michael Provenzano,,$257052.25  due 11/5/2020,,,129,117
Gray,100%,NASA 533 - 2020/11,5d,12/5/2020,12/10/2020,Michael Provenzano,,$256371.85  due 12/5/2020,,,130,117
Gray,100%,NASA 533 - 2020/12,5d,1/5/2021,1/11/2021,Michael Provenzano,,$254385.18  due 1/5/2021,,,131,117
Gray,100%,NASA 533 - 2021/1,5d,2/5/2021,2/12/2021,Michael Provenzano,9FS +120d,$260506.64  due 2/5/2021,,,132,117
Gray,100%,NASA 533 - 2021/2,5d,3/5/2021,3/12/2021,Michael Provenzano,132FS +15d,$140531.63  due 3/5/2021,,,133,117
Gray,100%,NASA 533 - 2021/3,5d,4/5/2021,4/12/2021,Michael Provenzano,133FS +16d,$143594.21  due 4/5/2021,,,134,117
Gray,100%,NASA 533 - 2021/4,5d,5/5/2021,5/12/2021,Michael Provenzano,134FS +17d,$144797.17  due 5/5/2021,,,135,117
Gray,100%,NASA 533 - 2021/5,5d,6/4/2021,6/11/2021,Michael Provenzano,135FS +17d,$139983.78  due 6/5/2021,,,136,117
Gray,100%,NASA 533 - 2021/6,5d,7/5/2021,7/12/2021,Michael Provenzano,136FS +16d,$136283.49  due 7/5/2021,,,137,117
Gray,100%,NASA 533 - 2021/7,5d,8/5/2021,8/11/2021,Michael Provenzano,,$134317.15  due 8/5/2021,,,138,117
Gray,100%,NASA 533 - 2021/8,5d,9/6/2021,9/10/2021,Michael Provenzano,,$127237.39  due 9/5/2021,,,139,117
Gray,100%,NASA 533 - 2021/9,5d,10/4/2021,10/8/2021,Michael Provenzano,,$125836.54  due 10/5/2021,,,140,117
Gray,100%,NASA 533 - 2021/10,5d,11/5/2021,11/11/2021,"Brandon Kirkman, Michael Provenzano",,$125836.54  due 11/5/2021,,,141,117
Gray,100%,NASA 533 - 2021/11,5d,12/6/2021,12/10/2021,Michael Provenzano,,$129785.41  due 12/5/2021,,,142,117
Gray,0%,NASA 533 - 2021/12,5d,1/3/2022,1/7/2022,Michael Provenzano,,$97190.12  due 1/5/2022,,,143,117
Green,21%,Masten Milestone Dates,327d,3/1/2021,5/31/2022,,,,,,144,2
Green,11%,MoonRanger Model Sharing,324d,3/4/2021,5/31/2022,Siri Maley,,to be revised based on Masten's feedback on timeline proposal,,,145,144
Gray,100%,"Update 3 (70% Fidelity): CAD, FE, Thermal, Mass Props",1d,3/4/2021,3/4/2021,,,,,,146,145
Gray,100%,"Update 4 (90% Fidelity): CAD, FE, Thermal, Mass Props",0.5d,6/11/2021,6/11/2021,Joe Zimo,,Not requested from Masten,,,147,145
Gray,100%,"Update 5 (95% Fidelity): External CAD, Thermal, Mass Props",21d,10/1/2021,10/29/2021,"Daniel Scher, Paulo R.M.Fisch",,,,,148,145
Green,0%,"Final (100% Fidelity): External CAD, Mass Props",51d,11/1/2021,1/10/2022,Daniel Scher,148,,,,149,145
Gray,0%,Final (100% Fidelity): FE,22d,1/11/2022,2/9/2022,Daniel Scher,"148, 149",,,,150,145
Gray,0%,Final (100% Fidelity): Thermal,101d,1/11/2022,5/31/2022,Paulo R.M.Fisch,"149, 547",,,,151,145
Gray,0%,"Verified Models: External CAD, FE, Thermal, Mass Props",0,2/9/2022,2/9/2022,"Daniel Scher, Paulo R.M.Fisch","149, 150",112d,,,152,145
Gray,100%,Payload EDU Testing Range,44d,3/1/2021,4/29/2021,,,,,,153,144
Gray,100%,MoonRanger Mass Model Delivery Date,0.5d,5/21/2021,5/21/2021,,,,,,154,144
Red,0%,Integration Operation Plan Sharing,10d,11/1/2021,11/12/2021,,,,,,155,144
Red,0%,Integration Operations Plan Update 2 (80% Fidelity),10d,11/1/2021,11/12/2021,,,,,,156,155
Green,95%,Project Management,442.5d,4/1/2020,12/10/2021,,,,,,157,2
Green,95%,Risk Review Board Meetings,442.5d,4/1/2020,12/10/2021,,,,,,158,157
Gray,100%,Apr 2020 Risk Review,0.5d,4/1/2020,4/1/2020,Joe Zimo,,,,,159,158
Gray,100%,May 2020 Risk Review,0.5d,5/1/2020,5/1/2020,Joe Zimo,,,,,160,158
Gray,100%,Jun 2020 Risk Review,0.5d,6/1/2020,6/1/2020,Joe Zimo,,,,,161,158
Gray,100%,Jul 2020 Risk Review,0.5d,7/1/2020,7/1/2020,Joe Zimo,,,,,162,158
Gray,100%,Aug 2020 Risk Review,0.5d,8/1/2020,8/1/2020,Joe Zimo,,,,,163,158
Gray,100%,Sep 2020 Risk Review,0.5d,9/1/2020,9/1/2020,Joe Zimo,,,,,164,158
Gray,100%,Oct 2020 Risk Review,0.5d,10/1/2020,10/1/2020,Joe Zimo,,,,,165,158
Gray,100%,Nov 2020 Risk Review,0.5d,11/1/2020,11/1/2020,Joe Zimo,,,,,166,158
Gray,100%,Dec 2020 Risk Review,0.5d,12/10/2020,12/10/2020,Joe Zimo,,,,,167,158
Gray,100%,Jan 2021 Risk Review,0.5d,1/10/2021,1/10/2021,Joe Zimo,,,,,168,158
Gray,100%,Feb 2021 Risk Review,0.5d,2/10/2021,2/10/2021,Joe Zimo,,,,,169,158
Gray,100%,Mar 2021 Risk Review,0.5d,3/10/2021,3/10/2021,Joe Zimo,,,,,170,158
Gray,100%,Apr 2021 Risk Review,0.5d,4/10/2021,4/10/2021,Joe Zimo,,,,,171,158
Gray,100%,May 2021 Risk Review,0.5d,5/10/2021,5/10/2021,Joe Zimo,,,,,172,158
Gray,100%,Jun 2021 Risk Review,0.5d,6/10/2021,6/10/2021,Joe Zimo,,,,,173,158
Gray,100%,Jul 2021 Risk Review,0.5d,7/10/2021,7/10/2021,Joe Zimo,,,,,174,158
Gray,100%,Aug 2021 Risk Review,0.5d,8/10/2021,8/10/2021,Joe Zimo,,,,,175,158
Gray,100%,Sep 2021 Risk Review,0.5d,9/10/2021,9/10/2021,Joe Zimo,,,,,176,158
Gray,100%,Oct 2021 Risk Review,0.5d,10/10/2021,10/10/2021,Joe Zimo,,,,,177,158
Gray,100%,Nov 2021 Risk Review,0.5d,11/10/2021,11/10/2021,Joe Zimo,,,,,178,158
Yellow,0%,Dec 2021 Risk Review,0.5d,12/10/2021,12/10/2021,Joe Zimo,,,,,179,158
Gray,100%,Project Management Plan Revision,6d,4/5/2021,4/12/2021,"Brandon Kirkman, Joe Zimo",,,,,180,157
Gray,100%,SOW Proposal for scope creep,9d,6/28/2021,7/8/2021,Brandon Kirkman,,,,,181,157
Gray,100%,Flight vs Dev phase notes,7d,5/25/2021,6/2/2021,Joe Zimo,,,,,182,157
Gray,100%,Risk Training Video,6d,8/2/2021,8/9/2021,Joe Zimo,,,,,183,157
Gray,100%,Systems Teams Action Items,6d,8/2/2021,8/9/2021,Joe Zimo,,,,,184,157
Gray,100%,2.0 PDR/CDR,291d,11/1/2020,12/10/2021,,,,,,185,1
Gray,100%,PDR Work,122d,11/1/2020,4/19/2021,,,,,,186,185
Gray,100%,CDR Work,169d,4/20/2021,12/10/2021,,,,,,187,185
Gray,100%,3.0 Pre-CDR Development,401d,12/13/2019,6/25/2021,,,,,,188,1
Gray,100%,Systems,281d,3/15/2020,4/9/2021,,,,,,189,188
Gray,100%,Systems Architecture,1d,3/15/2020,3/15/2020,,,,,,190,189
Gray,100%,Requirements,173d,6/10/2020,2/5/2021,,,,,,191,189
Gray,100%,Initial Requirements Definition (Pre PDR),15d,6/10/2020,6/30/2020,Joe Zimo,8SF,,,,192,191
Gray,100%,Requirements Review (Pre CDR),25d,1/4/2021,2/5/2021,Joe Zimo,14SF -18d,,,,193,191
Gray,100%,Verifications,70d,1/4/2021,4/9/2021,,,,,,194,189
Gray,100%,Verification Matrix,20d,1/11/2021,2/5/2021,Joe Zimo,14SF -18d,,,,195,194
Gray,100%,V&V Plan,25d,1/4/2021,2/5/2021,Joe Zimo,14SF -18d,having this baselined by CDR is necessary.,,,196,194
Gray,100%,System Environmental Test Plans,30d,3/1/2021,4/9/2021,Joe Zimo,195FS +15d,,,,197,194
Gray,100%,Equipment Lists,222d,4/2/2020,2/5/2021,,,,,,198,189
Gray,100%,MEL for PDR,25d,4/2/2020,5/6/2020,Joe Zimo,,,,,199,198
Gray,100%,MEL for CDR,25d,1/4/2021,2/5/2021,Joe Zimo,14SF -18d,,,,200,198
Gray,100%,PEL for PDR,25d,4/2/2020,5/6/2020,Joe Zimo,,,,,201,198
Gray,100%,PEL for CDR,25d,1/4/2021,2/5/2021,Joe Zimo,14SF -18d,,,,202,198
Gray,100%,ThEL for PDR,25d,4/2/2020,5/6/2020,Joe Zimo,,,,,203,198
Gray,100%,ThEL for CDR,25d,1/4/2021,2/5/2021,Joe Zimo,14SF -18d,,,,204,198
Gray,100%,Integration,336d,12/13/2019,3/26/2021,,,,,,205,188
Gray,100%,MoonRanger MSR 2 Development and Presentation Work,90d,12/13/2019,4/16/2020,Joe Zimo,,,,,206,205
Gray,100%,Design Analysis,60d,12/13/2019,3/5/2020,Joe Zimo,,,,,207,206
Gray,100%,Power Concept of Operations Study for MSR2,60d,12/13/2019,3/5/2020,Joe Zimo,7SF,,,,208,207
Gray,100%,Thermal Design Study for MSR2,60d,12/13/2019,3/5/2020,Joe Zimo,7SF,,,,209,207
Gray,100%,Vibration Survival Analysis for MSR2,60d,12/13/2019,3/5/2020,Joe Zimo,7SF,,,,210,207
Gray,100%,Mechantronics Design,60d,12/13/2019,3/5/2020,Joe Zimo,,,,,211,206
Gray,100%,Software Architecture Design,60d,12/13/2019,3/5/2020,Joe Zimo,7SF,,,,212,211
Gray,100%,Avionics Architecture Design,60d,12/13/2019,3/5/2020,Joe Zimo,7SF,,,,213,211
Gray,100%,Mechanical Design,60d,12/13/2019,3/5/2020,Joe Zimo,7SF,,,,214,211
Gray,100%,Mission Status Review 2,60d,1/24/2020,4/16/2020,Joe Zimo,,,,,215,206
Gray,100%,Compile Review Materials,30d,1/24/2020,3/5/2020,Joe Zimo,7SF,,,,216,215
Gray,100%,Prepare Review Slide Deck,30d,1/24/2020,3/5/2020,Joe Zimo,7SF,,,,217,215
Gray,100%,Present Review,1d,3/5/2020,3/5/2020,Joe Zimo,7SF,,,,218,215
Gray,100%,Address Action Items,6w,3/6/2020,4/16/2020,Joe Zimo,218,,,,219,215
Gray,100%,Preliminary ICD and Operation Plan,1d,8/24/2020,8/24/2020,Joe Zimo,,,,,220,205
Gray,100%,ICD+OP Update 1 (Final Software),1d,9/11/2020,9/11/2020,Joe Zimo,,,,,221,205
Gray,100%,ICD+OP Update 2,1d,11/13/2020,11/13/2020,Joe Zimo,,,,,222,205
Gray,100%,ICD+OP Update 3 (70% Fidelity),3d,2/12/2021,2/16/2021,Joe Zimo,,,,,223,205
Gray,100%,Masten ICD Finalized for Masten CDR,1d,3/26/2021,3/26/2021,Joe Zimo,,,,,224,205
Gray,100%,MoonRanger Models,201d,5/8/2020,2/12/2021,,,,,,225,205
Gray,100%,MoonRanger Model Preliminary,1d,5/8/2020,5/8/2020,,,"""",,,226,225
Gray,100%,MoonRanger Model Update 1,1d,9/11/2020,9/11/2020,,,"""",,,227,225
Gray,100%,MoonRanger Model Update 2 (mech assembly in CAD),70d,9/14/2020,12/18/2020,,227,"""",,,228,225
Gray,100%,MoonRanger Model Update 3,1d,2/12/2021,2/12/2021,,,"""",,,229,225
Gray,100%,Prototype Unit Development,269d,4/15/2020,4/26/2021,,,,,,230,188
Gray,100%,Test Rover Determination and Modification,35d,4/17/2020,6/4/2020,,,,,,231,230
Gray,100%,Determine Rover for AA Prototype Testing,1w,4/17/2020,4/23/2020,,206,,,,232,231
Gray,100%,Procure Rover for AA Prototype Testing,1w,4/24/2020,4/30/2020,,232,,,,233,231
Gray,100%,Determine Modifications to Rover for AA Prototype Testing,1w,5/1/2020,5/7/2020,,233,Simulate/Integrate Surrogate Testing Unit - Contract Deliverable,,,234,231
Gray,100%,Procure AA Prototype Testing Avionics,2w,5/8/2020,5/21/2020,,234,,,,235,231
Gray,100%,Modify Rover for AA Prototype Testing,2w,5/22/2020,6/4/2020,,235,,,,236,231
Gray,100%,PowerRanger v1,15d,4/15/2020,5/5/2020,,,,,,237,230
Gray,100%,Determine AA Prototype Objectives,2w,4/15/2020,4/28/2020,,,,,,238,237
Gray,100%,Standardized AA Test Plan,2w,4/15/2020,4/28/2020,,,,,,239,237
Gray,100%,Create PowerRanger Development Test Plan,1w,4/29/2020,5/5/2020,,239,Vaibhav working to get summary of PowerRanger objectives,,,240,237
Gray,100%,PowerRanger v2,254d,5/6/2020,4/26/2021,,,,,,241,230
Gray,100%,High Level Benchtop Architecture,1d,8/21/2020,8/24/2020,,9,,,,242,241
Gray,100%,Design Custom Components,20d,8/24/2020,9/21/2020,,242,,,,243,241
Gray,100%,Fabricate Custom Components,4w,9/21/2020,10/19/2020,,243,,,,244,241
Gray,100%,Order PR v3 Components,2w,8/24/2020,9/7/2020,,242,,,,245,241
Gray,100%,Receive PR v3 Components,2w,9/7/2020,9/21/2020,,245,,,,246,241
Gray,100%,Internal Wiring Schematic,3w,8/24/2020,9/14/2020,,242,,,,247,241
Gray,100%,Integrate on Benchtop,1w,10/19/2020,10/26/2020,,"244, 246, 247",,,,248,241
Gray,100%,Implement Components onto PowerRanger v3,3w,10/26/2020,11/16/2020,,248,,,,249,241
Gray,100%,Handoff to SW Team,1w,11/16/2020,11/23/2020,,249,,,,250,241
Gray,100%,NSS Emulator Development,109d,7/1/2020,11/30/2020,,,,,,251,241
Gray,100%,Integrate NSS emuator with MSP and RM46 (telemetry),109d,7/1/2020,11/30/2020,,,,,,252,251
Gray,100%,Test NSS emulator with MSP and RM46,109d,7/1/2020,11/30/2020,,,,,,253,251
Gray,100%,Sun Sensor Emulator Development,109d,7/1/2020,11/30/2020,,,,,,254,241
Gray,100%,Integrate sun sensor emulator with RM46,109d,7/1/2020,11/30/2020,,,,,,255,254
Gray,100%,Test sun sensor emulator with RM46,109d,7/1/2020,11/30/2020,,,,,,256,254
Gray,100%,EPSM (Comms) Emulator Development,214d,7/1/2020,4/26/2021,,,,,,257,241
Gray,100%,Design and develop EPSM (Comms) emulator,35d,7/1/2020,8/18/2020,,,,,,258,257
Gray,100%,Integrate EPSM emulator with RM46,25d,7/1/2020,8/4/2020,,,,,,259,257
Gray,100%,Test EPSM emulator with RM46,15d,4/6/2021,4/26/2021,,#REF,,,,260,257
Gray,100%,Determine Computing Platform for PowerRanger v2,3w,5/6/2020,5/26/2020,,237,IAR Workbench will be used,,,261,241
Gray,100%,Write PowerRanger v2 Embedded SW,20d,5/6/2020,6/2/2020,,,,,,262,241
Gray,100%,Laser Striping,4w,5/6/2020,6/2/2020,,237,,,,263,262
Gray,100%,Sensor Digital Interfacing,4w,5/6/2020,6/2/2020,,237,,,,264,262
Gray,100%,Telemetry Manager on PC,4w,5/6/2020,6/2/2020,,237,Command and telemetry list - Contract Deliverable,,,265,262
Gray,100%,Camera Data Acquisition,4w,5/6/2020,6/2/2020,,237,,,,266,262
Gray,100%,Data Communication Handling / Transfer,4w,5/6/2020,6/2/2020,,237,,,,267,262
Gray,100%,System Executive on PC,2w,5/6/2020,5/19/2020,,237,,,,268,262
Gray,100%,Health Monitor on PC,2w,5/6/2020,5/19/2020,,237,,,,269,262
Gray,100%,"Pose Estimation, Dead Reckoning, on CC",2w,5/6/2020,5/19/2020,,237,,,,270,262
Gray,100%,"Manage and Coordinate Test Facility and Equipment, v2",3w,5/6/2020,5/26/2020,,240,Schenley Park,,,271,241
Gray,100%,Run PowerRanger v2 Testing,10d,6/3/2020,6/16/2020,,"262, 271","2-3 weeks from 4/21, possible. Vaibhav to look into rough deadline date",,,272,241
Gray,100%,Generate PowerRanger v2 Test Report,10d,6/17/2020,6/30/2020,,272,Trade Study/Test Report for Surrogate Testing Unit - Contract Deliverable,,,273,241
Gray,100%,PowerRanger v2 Design Report,2w,6/3/2020,6/16/2020,,272SS,,,,274,241
Gray,100%,Proto-Flight Mechanical Development,311d,4/17/2020,6/25/2021,,,,,,275,188
Gray,100%,Chassis,154d,7/1/2020,2/1/2021,CMU,,,,,276,275
Gray,100%,"Driveline (wheels, hubs, wheel brackets)",160d,7/1/2020,2/9/2021,CMU,,,,,277,275
Gray,100%,Stowage and Deployment (S&D),90d,2/22/2021,6/25/2021,CMU,,,,,278,275
Gray,100%,Solar Panel and Solar Panel Deployment Selection,153d,7/1/2020,1/29/2021,CMU,,,,,279,275
Gray,100%,Thermal Simulation,211d,4/17/2020,2/5/2021,,,,,,280,275
Gray,100%,Thermal Simulation & Report Revised for CDR,75d,10/26/2020,2/5/2021,CMU,14SF -18d,,,,281,280
Gray,100%,Steady-State Transit Thermal Design,6w,4/17/2020,5/28/2020,,206,,,,282,280
Gray,100%,Steady-State Surface Thermal Design,6w,4/17/2020,5/28/2020,,206,,,,283,280
Gray,100%,Steady State Transit Thermal Analysis (FEA),8w,5/29/2020,7/23/2020,,282,,,,284,280
Gray,100%,Steady State Surface Thermal Analysis (FEA),8w,5/29/2020,7/23/2020,,283,,,,285,280
Gray,100%,Proto-Flight Software Development,211d,4/17/2020,2/5/2021,,,,,,286,188
Gray,100%,Refinement of Flight SW Dev (for CDR),120d,8/24/2020,2/5/2021,CMU,14SF -18d,,,,287,286
Gray,100%,Baselined Flight SW Dev (for PDR),141d,4/17/2020,10/30/2020,,,,,,288,286
Gray,100%,Flight Software Architecture Baseline,55d,5/18/2020,7/31/2020,,,,,,289,288
Gray,100%,Flight Software Architecture Baseline Draft 1,5d,5/18/2020,5/22/2020,,,,,,290,289
Gray,100%,Flight Software Architecture Baseline Draft 2,5d,6/22/2020,6/26/2020,,290FS +20d,,,,291,289
Gray,100%,Flight Software Architecture Baseline Draft 3,5d,7/27/2020,7/31/2020,,291FS +20d,Evaluate autonomy - Contract Deliverable,,,292,289
Gray,100%,Central Computer Baseline Development,30d,5/18/2020,6/26/2020,,,,,,293,288
Gray,100%,Camera Driver,6w,5/18/2020,6/26/2020,,,,,,294,293
Gray,100%,Stereo Perception,6w,5/18/2020,6/26/2020,,,,,,295,293
Gray,100%,Terrain Mapping,6w,5/18/2020,6/26/2020,,,,,,296,293
Gray,100%,Navigator,6w,5/18/2020,6/26/2020,,,,,,297,293
Gray,100%,Central Rover Executive,6w,5/18/2020,6/26/2020,,,,,,298,293
Gray,100%,Central Intercom,6w,5/18/2020,6/26/2020,,,,,,299,293
Gray,100%,Peripheral Computer Baseline Development,30d,5/18/2020,6/26/2020,,,,,,300,288
Gray,100%,RTOS and Drivers,6w,5/18/2020,6/26/2020,,,,,,301,300
Gray,100%,EKF,6w,5/18/2020,6/26/2020,,,,,,302,300
Gray,100%,Peripheral Rover Executive,6w,5/18/2020,6/26/2020,,,,,,303,300
Gray,100%,Wifi Gateway,6w,5/18/2020,6/26/2020,,,,,,304,300
Gray,100%,Motor Contorller Speed Regulation,6w,5/18/2020,6/26/2020,,,,,,305,300
Gray,100%,Motor Controller Drive Arc Determination/Computation,6w,5/18/2020,6/26/2020,,,,,,306,300
Gray,100%,Peripheral Intercom,6w,5/18/2020,6/26/2020,,,,,,307,300
Gray,100%,Embedded SW Development,30d,5/18/2020,6/26/2020,,,,,,308,288
Gray,100%,Motor MSP430,6w,5/18/2020,6/26/2020,,,,,,309,308
Gray,100%,WiFi Chip,6w,5/18/2020,6/26/2020,,,,,,310,308
Gray,100%,Simulation Autonomy Testing,85d,4/17/2020,8/13/2020,,,,,,311,288
Gray,100%,Simulation Platform Determination,2w,4/17/2020,4/30/2020,,206,Gazebo,,,312,311
Gray,100%,Customization of Simulation Platform for MoonRanger Application,6w,4/17/2020,5/28/2020,,206,Husky,,,313,311
Gray,100%,Simulation Platform Tutorials,2w,5/29/2020,6/11/2020,,"312, 313",,,,314,311
Gray,100%,Simulation Demo 1 Development,2w,6/12/2020,6/25/2020,,314,,,,315,311
Gray,100%,Simulation Demo 1,0,6/25/2020,6/25/2020,,315,Goals/objectives to be defined in avionics/sw meeting,,,316,311
Gray,100%,Simulation Demo 2 Development,7w,6/26/2020,8/13/2020,,316,,,,317,311
Gray,100%,Simulation Demo 2,0,8/13/2020,8/13/2020,,317,"needs additional definition, objectives",,,318,311
Gray,100%,Port ROS packages to PowerRanger,90d,6/29/2020,10/30/2020,,"293, 300",,,,319,288
Gray,100%,Evaluate ROS package performance on PR and/or ROS bag,90d,6/29/2020,10/30/2020,,319SS,,,,320,288
Gray,100%,Procurement,120d,4/1/2020,9/15/2020,,,,,,321,188
Gray,100%,Pre CDR Procurement,120d,4/1/2020,9/15/2020,,,,,,322,321
Gray,100%,Neutron Spectrometer System (NSS) Integration,210d,4/20/2020,2/5/2021,,,,,,323,188
Gray,100%,CONOPs with NSS data collection and downlink,63d,11/11/2020,2/5/2021,,,,,,324,323
Gray,100%,Version 2: updated after Masten ICD is released,1d,11/11/2020,11/11/2020,Joe Zimo,,,,,325,324
Gray,100%,Version 3: version released with MR CDR,35d,12/21/2020,2/5/2021,Joe Zimo,14SF -18d,,,,326,324
Gray,100%,"Version 1: shell of the CONOPs, an ideal situation",1d,11/11/2020,11/11/2020,,,ConOps - contract Deliverable,,,327,324
Gray,100%,NSS & MoonRanger ICD,139d,7/15/2020,1/25/2021,,,,,,328,323
Gray,100%,Version 1: first pass done,45d,7/15/2020,9/15/2020,Joe Zimo,,,,,329,328
Gray,100%,Version 2: version released with MR CDR,94d,9/16/2020,1/25/2021,Joe Zimo,329,"Joe to update Brandon, Done",,,330,328
Gray,100%,NSS Emulator,86d,4/20/2020,8/17/2020,,,,,,331,323
Gray,100%,In house hardware developed to interface with MR system like NSS,2w,4/20/2020,5/1/2020,,,,,,332,331
Gray,100%,Command/send receive system like NSS developed,3w,5/4/2020,5/22/2020,,332,,,,333,331
Gray,100%,Power simulation system like NSS developed,15d,5/25/2020,6/12/2020,,333,,,,334,331
Gray,100%,"Hardware, software, and power sim integrated",6d,6/15/2020,6/22/2020,,334,,,,335,331
Gray,100%,NSS Emulator approved by NSS Team at NASA Ames,10d,6/23/2020,7/6/2020,,335,,,,336,331
Gray,100%,Emulator shipped to Ames,2w,7/7/2020,7/20/2020,,336,,,,337,331
Gray,100%,Ames confirms functionality with Ground Support Equipment (GSE),10d,7/21/2020,8/3/2020,,337,,,,338,331
Gray,100%,Emulator returned to MR,2w,8/4/2020,8/17/2020,,338,,,,339,331
Gray,100%,Hardware Build,30d,4/1/2021,5/12/2021,,,,,,340,188
Gray,100%,Pre CDR Hardware Build,30d,4/1/2021,5/12/2021,,,,,,341,340
Gray,100%,Testing,279d,4/15/2020,5/10/2021,,,,,,342,188
Gray,100%,Field Testing - Mobility Prototype,279d,4/15/2020,5/10/2021,,,,,,343,342
Gray,100%,Determine Mobility Prototype Objectives,2w,4/15/2020,4/28/2020,,,,,,344,343
Gray,100%,Create Mobility Prototype Test Plan,2w,4/15/2020,4/28/2020,,,,,,345,343
Gray,100%,"Design, Fabricate, Integrate Mobility Prototype",40d,4/17/2020,6/11/2020,,,,,,346,343
Gray,100%,Chassis,30d,4/17/2020,5/28/2020,,,This is the mule frame,,,347,346
Gray,100%,Design Prototype Chassis,2w,4/17/2020,4/30/2020,,206,,,,348,276
Gray,100%,Procure and Fabricate Prototype Chassis BOM,2w,5/1/2020,5/14/2020,,348,,,,349,276
Gray,100%,Integrate and Build Chassis Prototype,2w,5/15/2020,5/28/2020,,349,,,,350,276
Gray,100%,Document Chassis Prototype Process,2w,5/15/2020,5/28/2020,,349,,,,351,276
Gray,100%,"Driveline (Wheels, motor control, actuators)",30d,4/17/2020,5/28/2020,,,,,,352,346
Gray,100%,Design Prototype Driveline,2w,4/17/2020,4/30/2020,,206,,,,353,352
Gray,100%,Wheel drop testing & analysis,2w,4/17/2020,4/30/2020,,353SS,,,,354,352
Gray,100%,Procure and Fabricate Prototype Driveline BOM,2w,5/1/2020,5/14/2020,,353,,,,355,352
Gray,100%,Write Driveline Embedded SW,2w,4/17/2020,4/30/2020,,353SS,,,,356,352
Gray,100%,Integrate and Build Driveline Prototype,2w,5/15/2020,5/28/2020,,"355, 356",,,,357,352
Gray,100%,Document Driveline Prototype Process,2w,5/15/2020,5/28/2020,,357SS,,,,358,352
Gray,100%,"Integrate Chassis, Driveline, Embedded SW, Test SW",2w,5/29/2020,6/11/2020,,"347, 352",,,,359,346
Gray,100%,Document Integration Process,2w,5/29/2020,6/11/2020,,359SS,,,,360,346
Gray,100%,Manage and Coordinate Test Facility and Equipment,3w,4/29/2020,5/19/2020,,345,,,,361,343
Gray,100%,Run Mobility Prototype Testing,0,6/11/2020,6/11/2020,,"359, 361",,,,362,343
Gray,100%,Generate Mobility Prototype Test Report,25d,4/6/2021,5/10/2021,,#REF,,,,363,343
Gray,100%,Prototype Vibration Testing,53d,5/27/2020,8/7/2020,,,,,,364,342
Gray,100%,Vibration Test Article Parts Ordering,27d,6/15/2020,7/21/2020,,366FF,,,,365,364
Gray,100%,Vibration Test Article Assembled,40d,5/27/2020,7/21/2020,,,,,,366,364
Gray,100%,Vibration Test Plan,40d,5/27/2020,7/21/2020,,,,,,367,364
Gray,100%,Vibe Test Run,0,7/27/2020,7/27/2020,,,,,,368,364
Gray,100%,Vibe Test Analyzed,2w,7/27/2020,8/7/2020,,368,,,,369,364
Gray,100%,Pre CDR Testing,240d,4/17/2020,3/18/2021,,,,,,370,342
Gray,100%,Modal Sweep and Random Vibe,1d,1/14/2021,1/14/2021,CMU,,continuing support,,,371,370
Gray,100%,Thermal Expansion Test,40d,1/15/2021,3/11/2021,CMU,371,,,,372,370
Gray,100%,Solar Panel Vibe Test,23d,11/23/2020,12/23/2020,CMU,,,,,373,370
Gray,100%,Solar Panel Static Load Test,24d,11/20/2020,12/23/2020,CMU,,,,,374,370
Gray,100%,Drop Testing,21d,1/15/2021,2/12/2021,CMU,,,,,375,370
Gray,100%,Seal Testing,21d,1/15/2021,2/12/2021,CMU,,,,,376,370
Gray,100%,Paper Mission,21d,1/15/2021,2/12/2021,CMU,,,,,377,370
Gray,100%,Hardware-in-the-Loop,21d,1/15/2021,2/12/2021,CMU,,,,,378,370
Gray,100%,Integrated Field Testing,40d,1/15/2021,3/11/2021,CMU,,,,,379,370
Gray,100%,Integrated Sim Testing,40d,1/15/2021,3/11/2021,CMU,,,,,380,370
Gray,100%,Modal Hammer Testing,25d,2/1/2021,3/5/2021,Joe Zimo,,,,,381,370
Gray,100%,Component-Level Radiation Testing,231d,4/17/2020,3/5/2021,,,,,,382,370
Gray,100%,Run Radiation Testing,101d,9/25/2020,2/12/2021,CMU,"387, 388FS +70d",,,,383,382
Gray,100%,Generate Radiation Test Report,15d,2/15/2021,3/5/2021,CMU,383,,,,384,382
Gray,100%,Determine Radiation Testing Objectives,1d,4/17/2020,4/17/2020,,206,,,,385,382
Gray,100%,Create Radiation Test Plan,1w,4/17/2020,4/23/2020,,385SS,,,,386,382
Gray,100%,Prepare Radiation Test Article,2w,4/17/2020,4/30/2020,,386SS,,,,387,382
Gray,100%,Manage and Coordinate Radiation Test Facility and Equipment,9w,4/17/2020,6/18/2020,,386SS,,,,388,382
Gray,100%,Component-Level Thermal Testing,240d,4/17/2020,3/18/2021,,,,,,389,370
Gray,100%,Run Thermal Testing,100d,9/25/2020,2/11/2021,CMU,"394, 395",Joe to double check - may be complete,,,390,389
Gray,100%,Generate Thermal Test Report,25d,2/12/2021,3/18/2021,CMU,390,,,,391,389
Gray,100%,Determine Thermal Testing Objectives,1w,4/17/2020,4/23/2020,,206,,,,392,389
Gray,100%,Create Thermal Test Plan,2w,4/17/2020,4/30/2020,,392SS,,,,393,389
Gray,100%,Source Thermal DUTs (Devices Under Test),4w,5/1/2020,5/28/2020,,393,,,,394,389
Gray,100%,Manage and Coordinate Test Facility and Equipment,23w,4/17/2020,9/24/2020,,393SS,,,,395,389
Gray,100%,Component-Level Vacuum Testing,185d,4/17/2020,12/31/2020,,,,,,396,370
Gray,100%,Run Vacuum Testing,75d,9/4/2020,12/17/2020,CMU,"401, 402",,,,397,396
Gray,100%,Generate Vacuum Test Report,10d,12/18/2020,12/31/2020,CMU,397,,,,398,396
Gray,100%,Determine Vacuum Testing Objectives,1w,4/17/2020,4/23/2020,,206,,,,399,396
Gray,100%,Create Vacuum Test Plan,2w,4/17/2020,4/30/2020,,399SS,,,,400,396
Gray,100%,Source Vac. DUTs,4w,5/1/2020,5/28/2020,,400,,,,401,396
Gray,100%,Manage and Coordinate Test Facility and Equipment,20w,4/17/2020,9/3/2020,,400SS,,,,402,396
Gray,100%,Delta CDR (Start Point),1d,5/10/2021,5/10/2021,,,,,,403,188
Green,51%,4.0 Systems Design & Build,297d,5/11/2021,6/30/2022,,,,,,404,1
Green,7%,System Management,261.5d,5/11/2021,5/11/2022,,,,,,405,404
Gray,0%,SIR Deliverables Complete (Buffer Deadlines),11d,4/12/2022,4/26/2022,,,**Update dependencies with MEC schedule update.,,,406,405
Gray,0%,Masten Communications Complete,1d,4/12/2022,4/12/2022,,37SF -4w,,,,407,406
Gray,0%,Physical Infrastructure Complete,1d,4/19/2022,4/19/2022,,37SF -3w,,,,408,406
Gray,0%,Final Documents Complete,1d,4/26/2022,4/26/2022,,37SF -2w,,,,409,406
Green,0%,NASA-Listed Deliverables for SIR,127.5d,11/15/2021,5/11/2022,,,,,,410,405
Gray,0%,Delivery-in-Place Storage Ready,1d,4/19/2022,4/19/2022,,408FF,,,,411,410
Green,0%,Ready for Lander Integration (Masten Coordination Items for SIR),122d,11/15/2021,5/3/2022,,,,,,412,410
Gray,0%,MoonRanger Needs Communicated,6w,1/25/2022,3/7/2022,,418,,,,413,412
Gray,0%,Support Personnel Trained for SIR Requirement,8w,3/8/2022,5/2/2022,,"413, 407FF",,,,414,412
Gray,0%,Safety Issues,15d,1/4/2022,1/24/2022,,,,,,415,412
Gray,0%,Health & Safety Warnings Documented,1w,1/4/2022,1/10/2022,,,"**Set manually, dependency experimentation would not eliminate slack between Plans Ready and Personnel Trained",,,416,415
Gray,0%,Handling & Safety Documented,1w,1/4/2022,1/10/2022,,,,,,417,415
Gray,0%,Required Safety Plans & Procedures Ready,2w,1/11/2022,1/24/2022,,"416, 417",,,,418,415
Gray,0%,Shipping Issues,85d,1/5/2022,5/3/2022,,,,,,419,412
Gray,0%,Detailed Proposal to Masten,3w,1/5/2022,1/25/2022,,,"**Set manually, dependency experimentation wouldn't eliminate slack between Plans Ready and Storage Ready",,,420,419
Gray,0%,Required Shipping & Handling Plans & Procedures Ready,2w,1/26/2022,2/8/2022,,420,,,,421,419
Gray,0%,Loose Shipping List,1w,4/13/2022,4/19/2022,,408FF,,,,422,419
Gray,0%,Masten Storage Ready,60d,2/9/2022,5/3/2022,,"408FF, 421",,,,423,419
Yellow,0%,Integration Plans & Procedures Approval On Track,99d,12/2/2021,4/19/2022,,,,,,424,412
Yellow,0%,Integration Plans Proposed,3w,12/2/2021,12/22/2021,,488,"How is this working?SYSThis should have several cycles. **Set manually, dependency experimentation wouldn't remove slack between Plans Approved and Facilities Available",,,425,424
Gray,0%,Integration Plans Approved,4w,12/23/2021,1/19/2022,,425,,,,426,424
Gray,0%,Integration Procedures Communicated,3w,3/23/2022,4/12/2022,,407FF,,,,427,424
Gray,0%,Integration Procedures on Schedule for Lander Delivery Need,4w,3/23/2022,4/19/2022,,408FF,,,,428,424
Gray,0%,Required Checkout Procedures Ready,6w,3/9/2022,4/19/2022,,408FF,Dependencies?SYS,,,429,424
Gray,0%,Integration Facilities Available per Schedule,0,4/19/2022,4/19/2022,,"426, 408FF",**Zeroed until understood,,,430,424
Green,0%,Operations Issues,117d,11/15/2021,4/26/2022,,,How is this working?OPS,,,431,412
Red,0%,Operation Procedures Communicated,6d,11/15/2021,11/22/2021,,,**Zeroed until understood. Start set manually.,,,432,431
Gray,0%,Operation Procedures on Schedule for Lander Delivery Need,0,4/26/2022,4/26/2022,,464,**Zeroed until understood,,,433,431
Gray,0%,Lander ICD Verifications,7d,4/18/2022,4/26/2022,,,,,,434,412
Gray,0%,SIR Mechanical Verifications Complete,7d,4/18/2022,4/26/2022,,"555, 409FF",**SIR happens before VV-02,,,435,434
Gray,0%,SIR Electrical Verifications Complete,7d,4/18/2022,4/26/2022,,"555, 409FF",**SIR happens before VV-02,,,436,434
Gray,0%,Post-SIR Mechanical Verifications Planned,7d,4/18/2022,4/26/2022,,"555, 409FF",**SIR happens before VV-02,,,437,434
Gray,0%,Post-SIR Electrical Verifications Planned,7d,4/18/2022,4/26/2022,,"555, 409FF",**SIR happens before VV-02,,,438,434
Gray,0%,SIR Logistics,41d,3/1/2022,4/26/2022,Joe Zimo,,,,,439,410
Gray,0%,Previous Reviews Complete,0,4/26/2022,4/26/2022,,"409FF, 5, 6, 7, 8, 9",,,,440,439
Gray,0%,RFAs Responded/Planned,0,4/26/2022,4/26/2022,,"409FF, 25, 26, 27, 28, 29, 30, 31, 32, 33, 34, 35",,,,441,439
Gray,0%,"Agenda, Success Criteria, Instructions Agreed Upon",36d,3/1/2022,4/19/2022,,,,,,442,439
Gray,0%,Participants/Approvers Identified,1d,3/1/2022,3/1/2022,,409FF -8w,,,,443,442
Gray,0%,Logistics Draft Proposed,1d,3/15/2022,3/15/2022,,406FF -6w,,,,444,442
Gray,0%,Logistics Internally Approved & Sent,7d,3/21/2022,3/29/2022,,"444, 406FF -4w",,,,445,442
Gray,0%,Logistics Approved by Stakeholders,14d,3/31/2022,4/19/2022,,406FF -1w,,,,446,442
Gray,0%,Primary Entrance Products,20d,3/30/2022,4/26/2022,,,,,,447,410
Gray,0%,Lifecycle Cost and Schedule for SIR,4w,3/30/2022,4/26/2022,,409FF,,,,448,447
Gray,0%,Requirement Validation Results Packaged,1w,4/20/2022,4/26/2022,,409FF,**After SIR (741FS +1w),,,449,447
Gray,0%,Requirement Verification Results Packaged,2w,4/13/2022,4/26/2022,,409FF,**After SIR (741FS +2w),,,450,447
Gray,0%,Qualification Testing Complete/On Track,0,4/26/2022,4/26/2022,,409FF,"**After SIR (785, 786, 787)",,,451,447
Gray,0%,Acceptance Criteria Documented Met,2w,4/13/2022,4/26/2022,,409FF,,,,452,447
Gray,0%,Risk Assessment Updated,1d,4/22/2022,4/22/2022,,41,,,,453,447
Gray,0%,Risks Accepted,2w,4/13/2022,4/26/2022,,409FF,**Should link to 454 but puts it after SIR,,,454,447
Gray,0%,Hazard Analysis Controls Verified,1d,4/26/2022,4/26/2022,,409FF,,,,455,447
Gray,0%,Forward Work on Schedule,40d,3/2/2022,4/26/2022,,,,,,456,410
Gray,0%,Discrepancies Closure On Track,4w,3/30/2022,4/26/2022,,409FF,,,,457,456
Gray,0%,TBD/TBR Disposition On Schedule,8w,3/2/2022,4/26/2022,,409FF,,,,458,456
Gray,0%,Open Work Closure Planned,6w,3/16/2022,4/26/2022,,409FF,,,,459,456
Gray,0%,Test Report Unaccomplished Tasks & Retests,2w,4/13/2022,4/26/2022,,409FF,,,,460,456
Gray,0%,Lessons Learned Captured,3w,4/6/2022,4/26/2022,,409FF,,,,461,456
Gray,0%,Mission Execution Aspects,15d,4/6/2022,4/26/2022,,,,,,462,410
Gray,0%,Expected Performance in Operational Environment Documented,3w,4/6/2022,4/26/2022,,409FF,,,,463,462
Gray,0%,Mission Operations Procedures On Schedule for SIR,0,4/26/2022,4/26/2022,,"409FF, 490",Where is this captured?OPS **Zeroed until understood,,,464,462
Green,0%,Acceptance Data Package,121.5d,11/22/2021,5/11/2022,,,,,,465,410
Gray,0%,Requirements Verification Items,28d,3/18/2022,4/26/2022,,,,,,466,465
Gray,0%,Requirements Review,25d,3/18/2022,4/21/2022,Joe Zimo,37SF -13d,,,,467,466
Gray,0%,Approved & Pending Deviations/Waivers,2w,4/13/2022,4/26/2022,,409FF,**Should link to requirements review but puts after SIR,,,468,466
Gray,0%,Use As-Is or Repair Determinations,2w,4/13/2022,4/26/2022,,409FF,,,,469,466
Gray,0%,Test Records,1d,4/26/2022,4/26/2022,,409FF,"**Zeroed until determine what to do about VVs happening after SIR. Dependencies 408FF, 851",,,470,466
Gray,0%,Inspection Records,1d,4/26/2022,4/26/2022,,409FF,**Zeroed until determine what to do about VVs happening after SIR,,,471,466
Gray,0%,System Specifications,28d,3/18/2022,4/26/2022,,,,,,472,465
Gray,0%,System Specifications <Parent Standin>,0,4/26/2022,4/26/2022,,"474, 475, 476, 477, 478",,,,473,472
Gray,0%,MEL for SIR,25d,3/18/2022,4/21/2022,Joe Zimo,37SF -13d,,,,474,472
Gray,0%,PEL for SIR,25d,3/18/2022,4/21/2022,Joe Zimo,37SF -13d,,,,475,472
Gray,0%,ThEL for SIR,25d,3/18/2022,4/21/2022,Joe Zimo,37SF -13d,,,,476,472
Gray,0%,Final Structural/Mechanical Analysis Report,1d,4/26/2022,4/26/2022,,409FF,,,,477,472
Gray,0%,Final Thermal Analysis Report,1d,4/26/2022,4/26/2022,,"409FF, 476",,,,478,472
Gray,0%,Environmental Qualification Documentation,20.5d,4/13/2022,5/11/2022,,,,,,479,465
Gray,0%,Pressure Proof/Burst,7d,4/18/2022,4/26/2022,,"1385, 409FF",,,,480,479
Gray,0%,Vibration Test Procedure,2w,4/13/2022,4/26/2022,,409FF,**After SIR (786FS -2w),,,481,479
Gray,0%,Vibration Test Report,1w,4/20/2022,4/26/2022,,409FF,**After SIR (786),,,482,479
Gray,0%,EMI/EMC Test Procedure,2w,4/27/2022,5/11/2022,,1344FS -2w,,,,483,479
Gray,0%,EMI/EMC Test Report,2w,4/13/2022,4/26/2022,,409FF,**After SIR (785),,,484,479
Gray,0%,TVAC Test Procedure,2w,4/13/2022,4/26/2022,,409FF,**After SIR(787FS-2wk),,,485,479
Gray,0%,TVAC Test Report,2w,4/13/2022,4/26/2022,,409FF,**After SIR (787),,,486,479
Green,0%,SIR Operations Documentation,101d,11/22/2021,4/12/2022,,,,,,487,465
Green,0%,Interface & Integration Requirements Documentation,7d,11/23/2021,12/1/2021,,554,,,,488,487
Gray,0%,Critical Component Alignment Data & Instructions,0,4/12/2022,4/12/2022,,427,"Captured in ""Integration Procedures Communicated""?MEC",,,489,487
Red,0%,Instrument Operation Procedures/Manuals,0,11/22/2021,11/22/2021,,432,Where is this captured?OPS,,,490,487
Gray,0%,SIR Software Delivery,20d,3/30/2022,4/26/2022,,,Link to protoflight install or to software release?SOF,,,491,465
Gray,0%,Software Quality/Standards Documentation,4w,3/30/2022,4/26/2022,,"1004, 409FF","Mike Selby NASA - ""We have not dictated a specific standard, but would like to hear what standards you may have used."" Link to protoflight install or to software release?SOF",,,492,491
Gray,0%,Verification & Validation Documentation,4w,3/30/2022,4/26/2022,,"1004, 409FF",Link to protoflight install or to software release?SOF,,,493,491
Gray,0%,Version Description Documentation,7d,4/18/2022,4/26/2022,,"1004, 409FF",Link to protoflight install or to software release?SOF,,,494,491
Gray,0%,Any Software Certifications,7d,4/18/2022,4/26/2022,,"1004, 409FF",Link to protoflight install or to software release?SOF,,,495,491
Gray,0%,System Safety Assessment,25d,3/23/2022,4/26/2022,,,,,,496,465
Gray,0%,Hazard Analysis,2w,3/23/2022,4/5/2022,,498SF,,,,497,496
Gray,0%,Verification of Hazard Controls,3w,4/6/2022,4/26/2022,,409FF,,,,498,496
Gray,0%,Failure Analyses,4w,3/30/2022,4/26/2022,,409FF,,,,499,496
Gray,0%,DD Form 250,1w,4/20/2022,4/26/2022,,409FF,,,,500,496
Gray,0%,As-Built Technical Drawing Package,36d,3/8/2022,4/27/2022,,,,,,501,465
Gray,0%,Mechanical/Thermal,1.5d,4/26/2022,4/27/2022,,,,,,502,501
Gray,0%,Mechanical/Thermal <Parent Standin>,0,4/27/2022,4/27/2022,,"504, 505, 507",,,,503,502
Gray,0%,Weight & Balance (CG) Information,1d,4/26/2022,4/27/2022,,"508, 409FF",,,,504,502
Gray,0%,Thermal Coatings,1d,4/26/2022,4/26/2022,,409FF,,,,505,502
Gray,0%,CAD Model,1d,4/26/2022,4/27/2022,,,,,,506,502
Gray,0%,CAD Model <Parent Standin>,0,4/27/2022,4/27/2022,,"508, 509, 510, 511",,,,507,506
Gray,0%,As-Built Dimensions,0,4/26/2022,4/26/2022,,1235,**Should be VV-02?SYS But after SIR. Needs longer duration.,,,508,506
Gray,0%,Stowed Outer Mold Line,1d,4/26/2022,4/27/2022,,508,,,,509,506
Gray,0%,Full Range of Motion,1d,4/26/2022,4/27/2022,,508,,,,510,506
Gray,0%,Grounding Strap Contact Point,1d,4/26/2022,4/27/2022,,508,,,,511,506
Gray,0%,Electrical,26.5d,3/22/2022,4/27/2022,,,,,,512,501
Gray,0%,Electrical <Parent Standin>,0,4/27/2022,4/27/2022,,"514, 515, 516, 517",,,,513,512
Gray,0%,As-Built SEC Pinout,1d,4/26/2022,4/27/2022,,1235,,,,514,512
Gray,0%,Internal Power & Grounding Schematic,1w,3/22/2022,3/28/2022,,627,Preliminarily linked to LIFe flight testing ?AVI,,,515,512
Gray,0%,Inhibits for Release Mechanisms,1w,3/22/2022,3/28/2022,,627,Preliminarily linked to LIFe flight testing ?AVI,,,516,512
Gray,0%,Electrical Inhibits to DNH Hazards,1w,3/22/2022,3/28/2022,,627,Preliminarily linked to LIFe flight testing ?AVI,,,517,512
Gray,0%,Bill of Materials,5d,4/19/2022,4/26/2022,,,,,,518,501
Gray,0%,Bill of Materials <Parent Standin>,0,4/26/2022,4/26/2022,,"520, 521, 522, 523",,,,519,518
Gray,0%,Outgassing/Offgassing Information,1w,4/19/2022,4/26/2022,,1235FF,"**Could change to 666 ""QA Received Parts""",,,520,518
Gray,0%,Amounts of Organics,1d,4/25/2022,4/26/2022,,520FF,,,,521,518
Gray,0%,Amounts of Hazardous Materials,1d,4/25/2022,4/26/2022,,520FF,,,,522,518
Gray,0%,Amounts of Radiation Sources,1d,4/25/2022,4/26/2022,,520FF,,,,523,518
Gray,0%,Certificates of Compliance,1d,3/8/2022,3/9/2022,,,,,,524,501
Gray,0%,Certificates of Compliance <Parent Standin>,0,3/9/2022,3/9/2022,,"526, 527, 528, 529",,,,525,524
Gray,0%,Attachment Bolts/Fasteners,1d,3/8/2022,3/9/2022,,926FF,,,,526,524
Gray,0%,Electrical Connectors,1d,3/8/2022,3/9/2022,,926FF,,,,527,524
Gray,0%,Release Mechanisms,1d,3/8/2022,3/9/2022,,926FF,,,,528,524
Gray,0%,Safety-Critical Components,1d,3/8/2022,3/9/2022,,926FF,,,,529,524
Gray,0%,Non-ADP Items Available,5d,4/20/2022,4/26/2022,,,,,,530,410
Gray,0%,Critical Component Operating Time Logs,1w,4/20/2022,4/26/2022,,409FF,,,,531,530
Gray,0%,Part Number Nomenclature,1w,4/20/2022,4/26/2022,,409FF,,,,532,530
Gray,0%,Critical Component Transfer Records,1w,4/20/2022,4/26/2022,,409FF,,,,533,530
Gray,0%,Critical Component Transportation Data,1w,4/20/2022,4/26/2022,,409FF,,,,534,530
Gray,0%,Component Logbooks,1w,4/20/2022,4/26/2022,,409FF,,,,535,530
Gray,0%,Parts & Drawings with Version History,1w,4/20/2022,4/26/2022,,409FF,,,,536,530
Gray,100%,Parts Management,10d,5/11/2021,5/24/2021,,,,,,537,405
Gray,100%,Implement Asset managment,10d,5/11/2021,5/24/2021,Tim Angert,403,,,,538,537
Gray,100%,Implement Material Tracking for internaly fabricated Parts,10d,5/11/2021,5/24/2021,Tim Angert,403,,,,539,537
Green,89%,Facilities,297d,5/11/2021,6/30/2022,,,,,,540,404
Green,77%,Cleanroom,145d,5/11/2021,11/30/2021,,,,,,541,540
Gray,100%,Build Cleanroom,116d,5/11/2021,10/19/2021,Warren Whittaker,403,,,,542,541
Red,30%,Complete Cleanroom Documentation,56d,9/3/2021,11/19/2021,,,,,,543,541
Yellow,,Cleanroom Particle Counter Procurement,0,11/30/2021,11/30/2021,,,,,2300,544,541
Yellow,,Cleanroom Consumables Procurement (6 months),0,11/30/2021,11/30/2021,,,,,4200,545,541
Green,99%,Thermal Desktop,178d,10/25/2021,6/30/2022,,,,,,546,540
Gray,100%,Thermal Server Setup,7d,10/25/2021,11/2/2021,Paulo R.M.Fisch,,,,,547,546
Gray,,Thermal Desktop Renewal,0,6/30/2022,6/30/2022,,,7051,,,548,546
Green,48%,Interface Documentation,236d,5/11/2021,4/5/2022,,,,,,549,404
Green,68%,Masten ICD maintenance,113d,6/24/2021,11/29/2021,"hjones@andrew.cmu.edu, Joe Zimo",,,,,550,549
Red,80%,Masten ICD Review,110d,6/24/2021,11/24/2021,Joe Zimo,403FS +32d,,,,551,550
Gray,100%,Masten ICD October 2021 requests,7d,10/6/2021,10/14/2021,Siri Maley,,,,,552,550
Gray,100%,Determination of 18W/1hr duration request,4d,11/16/2021,11/19/2021,Siri Maley,"584, 586",,,,553,550
Red,0%,Masten ICD Signature Cycle,20d,10/26/2021,11/22/2021,Joe Zimo,552FS +7d,,,,554,550
Green,20%,All Masten ICD TBD/TBR Resolved,5d,11/23/2021,11/29/2021,Joe Zimo,554,"Siri changed this dependency from 417to 418, but it's still probably later than it's shown (ICD TBD table says Dec 2021)",,,555,550
Green,0%,Internal ICD maintenance,36d,10/22/2021,12/10/2021,Siri Maley,,,,,556,549
Green,0%,Visual Grounding Path Review 1,3d,11/25/2021,11/29/2021,"Daniel Scher, Lydia Schweitzer, Saksham Khurana, Tim Angert",580,"Where avionics and mechancial talks about the ground path of each component with documented images to make sure we understand what is going on during assembly and if there are any solutions we need to implement ( IE conductive epoxy, different insert material,  isulolating pads in a bolt stackup)",,,557,556
Yellow,0%,GSE Port Specification Verification,0,12/10/2021,12/10/2021,,"979, 983",,,,558,556
Green,0%,Rev F Update & Sign-off,28d,10/22/2021,11/30/2021,"Daniel Scher, Emilio, Lydia Schweitzer, Olivia Corrodi, Paulo R.M.Fisch, Saksham Khurana, Siri Maley, tenzinc@andrew.cmu.edu",,,,,559,556
Red,38%,NSS ICD maintenance,144d,5/11/2021,11/26/2021,Lydia Schweitzer,,,,,560,549
Gray,100%,NSS ICD Revision A -- document baselined,1d,5/11/2021,5/11/2021,Lydia Schweitzer,403,,,,561,560
Gray,100%,NSS ICD Revision B,53d,5/12/2021,7/23/2021,Lydia Schweitzer,561,,,,562,560
Red,0%,NSS ICD Revision C -- final version,90d,7/26/2021,11/26/2021,Lydia Schweitzer,562,,,,563,560
Gray,100%,Message dictionary Revision A (MOP-defined),10d,6/1/2021,6/14/2021,Lydia Schweitzer,403FS +15d,,,,564,549
Gray,100%,Message Dictionary Reviewed by AVI/SOF,14d,6/15/2021,7/2/2021,Lydia Schweitzer,564,,,,565,549
Gray,100%,Message dictionary Revision B (with AVI/SOF revisions),14d,7/5/2021,7/22/2021,Lydia Schweitzer,"564, 565",,,,566,549
Gray,0%,Message dictionary Revision C (scenario tested),15d,3/2/2022,3/22/2022,Lydia Schweitzer,"566, 1240",,,,567,549
Gray,0%,Message dictionary Revision D (final version),10d,3/23/2022,4/5/2022,Lydia Schweitzer,567,,,,568,549
Gray,100%,Message dictionary defined (GCS-ROV),10d,4/20/2022,5/3/2022,tenzinc@andrew.cmu.edu,567FS +20d,,,,569,404
Gray,100%,Terramule Building,5d,5/11/2021,5/17/2021,Daniel Scher,403,,,,570,404
Gray,100%,Morphin,38d,6/30/2021,8/20/2021,,,,,,571,404
Gray,100%,Add dot projector,38d,6/30/2021,8/20/2021,"Daniel Scher, Saksham Khurana",,Nothing bloking this too my knowledge (just not a priority currently). It is not urgent and is only required before release 2.,,,572,571
Gray,100%,Add flight camera mounts and shades,38d,6/30/2021,8/20/2021,Daniel Scher,,,,,573,571
Gray,100%,Mass Model,25d,5/11/2021,6/14/2021,Daniel Scher,,,,,574,404
Gray,100%,Design,7d,5/11/2021,5/19/2021,,403,,,,575,574
Gray,100%,Build,8d,5/20/2021,5/31/2021,,575,,,,576,574
Gray,100%,Document,9d,6/1/2021,6/11/2021,,576,,,,577,574
Gray,100%,Package & Deliver,1d,6/14/2021,6/14/2021,,577,,,,578,574
Green,44%,Protoflight Rover,241.5d,5/11/2021,4/13/2022,,,,,,579,404
Red,80%,Masten ICD Signoff,40d,9/30/2021,11/24/2021,Joe Zimo,,,,,580,579
Green,42%,Avionics,136d,9/13/2021,3/21/2022,Lydia Schweitzer,,,,,581,579
Gray,100%,Board requirement + feature design,32d,10/1/2021,11/15/2021,,,,,,582,581
Gray,100%,Avionics Design Review,10d,10/18/2021,10/29/2021,Lydia Schweitzer,,,,,583,582
Gray,100%,Architecture final,3d,11/1/2021,11/3/2021,Lydia Schweitzer,"580FS -18d, 583",,,,584,582
Gray,100%,Grounding and bonding,10d,10/1/2021,10/14/2021,"Daniel Scher, Lydia Schweitzer, Tim Angert",,,,,585,582
Gray,100%,Board Interfaces,10d,11/2/2021,11/15/2021,Lydia Schweitzer,584FS -2d,,,,586,582
Gray,100%,Lander power control,2d,11/4/2021,11/5/2021,Lydia Schweitzer,580FS -15d,,,,587,582
Green,20%,Boards,130d,9/21/2021,3/21/2022,Lydia Schweitzer,,Are these up-to-date?AVI They don't appear to match SYS-0196,,,588,581
Green,4%,Motor Controller,83d,11/16/2021,3/10/2022,Lydia Schweitzer,,,,,589,588
Gray,100%,Requirements,3d,11/16/2021,11/18/2021,Lydia Schweitzer,586,,,,590,589
Gray,100%,Rev A - Design,0,11/18/2021,11/18/2021,Lydia Schweitzer,590,,,,591,589
Gray,100%,Rev A - Fabrication + assembly,0,11/18/2021,11/18/2021,Lydia Schweitzer,591,,,,592,589
Gray,100%,Rev A - Testing,0,11/18/2021,11/18/2021,Lydia Schweitzer,592,,,,593,589
Gray,100%,Rev B - Design,0,11/18/2021,11/18/2021,Lydia Schweitzer,593,,,,594,589
Gray,100%,Rev B - Fabrication + assembly,0,11/18/2021,11/18/2021,Lydia Schweitzer,594,,,4878,595,589
Gray,0%,Rev B - Testing,15d,12/31/2021,1/20/2022,Lydia Schweitzer,595FS +30d,,,,596,589
Gray,0%,Rev C - Design,5d,1/21/2022,1/27/2022,Lydia Schweitzer,596,,,,597,589
Gray,0%,Rev C - Fabrication + assembly,10d,1/28/2022,2/10/2022,Lydia Schweitzer,597,,1000,,598,589
Gray,0%,Rev C - Testing,10d,2/11/2022,2/24/2022,Lydia Schweitzer,598,,,,599,589
Gray,0%,Rev F - Flight: Fabrication + assembly,15d,2/11/2022,3/3/2022,Lydia Schweitzer,598,,6000,,600,589
Gray,0%,Rev F - Flight: Testing,10d,2/25/2022,3/10/2022,Lydia Schweitzer,599,,,,601,589
Green,33%,Dot Projector Board,90d,11/16/2021,3/21/2022,Lydia Schweitzer,,Is this actual the critical path?SYS,,,602,588
Red,90%,Requirements,5d,11/16/2021,11/22/2021,Lydia Schweitzer,582,Need to ensure we're actually working in parallel with SOF?SYS. Parent task?SYS,,,603,602
Gray,100%,Rev A - Design,0,11/22/2021,11/22/2021,Lydia Schweitzer,603,,,,604,602
Gray,100%,Rev A - Fabrication + assembly,0,11/22/2021,11/22/2021,Lydia Schweitzer,604,,,,605,602
Gray,100%,Rev A - Testing,0,11/22/2021,11/22/2021,Lydia Schweitzer,605,,,,606,602
Gray,100%,Rev B - Design,10d,11/23/2021,12/6/2021,Lydia Schweitzer,606,,,,607,602
Gray,100%,Rev B - Fabrication + assembly,5d,12/7/2021,12/13/2021,Lydia Schweitzer,607,,,500,608,602
Gray,50%,Rev B - Testing,20d,12/14/2021,1/10/2022,Lydia Schweitzer,608,,,,609,602
Gray,0%,Rev C - Design,5d,1/11/2022,1/17/2022,Lydia Schweitzer,609,,,,610,602
Gray,0%,Rev C - Fabrication + assembly,10d,1/18/2022,1/31/2022,Lydia Schweitzer,610,,500,,611,602
Gray,0%,Rev C - Testing,10d,2/1/2022,2/14/2022,Lydia Schweitzer,611,,,,612,602
Gray,0%,Rev F - Flight: Fabrication + assembly,15d,2/15/2022,3/7/2022,Lydia Schweitzer,612,,1500,,613,602
Gray,0%,Rev F - Flight: Testing,10d,3/8/2022,3/21/2022,Lydia Schweitzer,613,,,,614,602
Green,15%,LIFe Board,95d,11/9/2021,3/21/2022,Lydia Schweitzer,,,,,615,588
Gray,100%,Requirements,5d,11/9/2021,11/15/2021,Lydia Schweitzer,"584, 585, 586FS -5d, 587FS -5d","Dependencies?SYS All Boards, but if end dates are correct don't change them.",,,616,615
Gray,100%,Rev A - Design,5d,11/16/2021,11/22/2021,Lydia Schweitzer,616,,,,617,615
Gray,100%,Rev A - Fabrication + assembly,0,11/22/2021,11/22/2021,Lydia Schweitzer,617,,,1000,618,615
Gray,100%,Rev A - Testing,0,11/22/2021,11/22/2021,Lydia Schweitzer,618,,,,619,615
Green,80%,Rev B - Design,5d,11/23/2021,11/29/2021,Lydia Schweitzer,619,,,,620,615
Yellow,0%,Rev B - Fabrication + assembly,10d,11/30/2021,12/13/2021,Lydia Schweitzer,620,,,1000,621,615
Gray,0%,Rev B - Testing,20d,12/14/2021,1/10/2022,Lydia Schweitzer,621,,,,622,615
Gray,0%,Rev C - Design,5d,1/11/2022,1/17/2022,Lydia Schweitzer,622,,,,623,615
Gray,0%,Rev C - Fabrication + assembly,10d,1/18/2022,1/31/2022,Lydia Schweitzer,623,,1000,,624,615
Gray,0%,Rev C - Testing,10d,2/1/2022,2/14/2022,Lydia Schweitzer,624,,,,625,615
Gray,0%,Rev F - Flight: Fabrication + assembly,15d,2/15/2022,3/7/2022,Lydia Schweitzer,625,,3000,,626,615
Gray,0%,Rev F - Flight: Testing,10d,3/8/2022,3/21/2022,Lydia Schweitzer,626,,,,627,615
Green,14%,OBC Interface Board,95d,11/9/2021,3/21/2022,Lydia Schweitzer,,,,,628,588
Gray,100%,Requirements,10d,11/9/2021,11/22/2021,Lydia Schweitzer,"584, 585, 586FS -5d, 587FS -5d",,,,629,628
Gray,100%,Rev A - Design,0,11/22/2021,11/22/2021,Lydia Schweitzer,629,,,,630,628
Gray,100%,Rev A - Fabrication + assembly,0,11/22/2021,11/22/2021,Lydia Schweitzer,630,,,1000,631,628
Gray,100%,Rev A - Testing,0,11/22/2021,11/22/2021,Lydia Schweitzer,631,,,,632,628
Green,75%,Rev B - Design,5d,11/23/2021,11/29/2021,Lydia Schweitzer,632,,,,633,628
Yellow,0%,Rev B - Fabrication + assembly,10d,11/30/2021,12/13/2021,Lydia Schweitzer,633,,,1000,634,628
Gray,0%,Rev B - Testing,20d,12/14/2021,1/10/2022,Lydia Schweitzer,634,,,,635,628
Gray,0%,Rev C - Design,5d,1/11/2022,1/17/2022,Lydia Schweitzer,635,,,,636,628
Gray,0%,Rev C - Fabrication + assembly,10d,1/18/2022,1/31/2022,Lydia Schweitzer,636,,1000,,637,628
Gray,0%,Rev C - Testing,10d,2/1/2022,2/14/2022,Lydia Schweitzer,637,,,,638,628
Gray,0%,Rev F - Flight: Fabrication + assembly,15d,2/15/2022,3/7/2022,Lydia Schweitzer,638,,3000,,639,628
Gray,0%,Rev F - Flight: Testing,10d,3/8/2022,3/21/2022,Lydia Schweitzer,639,,,,640,628
Green,26%,OBC WiFi Board,85d,11/9/2021,3/7/2022,Lydia Schweitzer,,,,,641,588
Gray,100%,Requirements,10d,11/9/2021,11/22/2021,Lydia Schweitzer,"584, 585, 586FS -5d, 587FS -5d",,,,642,641
Gray,100%,Rev A - Design,0,11/22/2021,11/22/2021,Lydia Schweitzer,642,,,,643,641
Gray,100%,Rev A - Fabrication + assembly,0,11/22/2021,11/22/2021,Lydia Schweitzer,643,,,,644,641
Gray,100%,Rev A - Testing,0,11/22/2021,11/22/2021,Lydia Schweitzer,644,,,,645,641
Gray,100%,Rev B - Design,0,11/22/2021,11/22/2021,Lydia Schweitzer,645,,,,646,641
Gray,100%,Rev B - Fabrication + assembly,0,11/22/2021,11/22/2021,Lydia Schweitzer,646,,,500,647,641
Green,50%,Rev B - Testing,25d,11/23/2021,12/27/2021,Lydia Schweitzer,647,,,,648,641
Gray,0%,Rev C - Design,5d,12/28/2021,1/3/2022,Lydia Schweitzer,648,,,,649,641
Gray,0%,Rev C - Fabrication + assembly,10d,1/4/2022,1/17/2022,Lydia Schweitzer,649,,500,,650,641
Gray,0%,Rev C - Testing,10d,1/18/2022,1/31/2022,Lydia Schweitzer,650,,,,651,641
Gray,0%,Rev F - Flight: Fabrication + assembly,15d,2/1/2022,2/21/2022,Lydia Schweitzer,651,,1500,,652,641
Gray,0%,Rev F - Flight: Testing,10d,2/22/2022,3/7/2022,Lydia Schweitzer,652,,,,653,641
Green,24%,TX2i Interface Board,119d,9/21/2021,3/4/2022,Lydia Schweitzer,,,,,654,588
Gray,100%,Requirements,5d,9/21/2021,9/27/2021,Lydia Schweitzer,582FS -40d,,,,655,654
Gray,100%,Rev A - Design,0,9/27/2021,9/27/2021,Lydia Schweitzer,655,,,,656,654
Gray,100%,Rev A - Fabrication + assembly,10d,9/28/2021,10/11/2021,Lydia Schweitzer,656,,,,657,654
Gray,100%,Rev A - Testing,4d,10/12/2021,10/15/2021,Lydia Schweitzer,657,,,,658,654
Red,80%,Rev B - Design,5d,11/22/2021,11/26/2021,Lydia Schweitzer,658FS +25d,,,,659,654
Yellow,0%,Rev B - Fabrication + assembly,10d,11/29/2021,12/10/2021,Lydia Schweitzer,659,,,,660,654
Gray,0%,Rev B - Testing,10d,12/13/2021,12/24/2021,Lydia Schweitzer,660,,,,661,654
Gray,0%,Rev C - Design,5d,12/27/2021,12/31/2021,Lydia Schweitzer,661,,,,662,654
Gray,0%,Rev C - Fabrication + assembly,10d,1/3/2022,1/14/2022,Lydia Schweitzer,662,,1500,,663,654
Gray,0%,Rev C - Testing,10d,1/17/2022,1/28/2022,Lydia Schweitzer,663,,,,664,654
Gray,0%,Rev F - Flight: Fabrication + assembly,15d,1/31/2022,2/18/2022,Lydia Schweitzer,664,,4000,,665,654
Gray,0%,Rev F - Flight: Testing,10d,2/21/2022,3/4/2022,Lydia Schweitzer,665,,,,666,654
Green,50%,Additional Flight Procurement,121d,9/13/2021,2/28/2022,Tim Angert,,"0% -- haven't ordered or don't know
45% -- ordered
90% -- shipped
100% -- in hand",1500,,667,581
Green,45%,EPSM,121d,9/13/2021,2/28/2022,Tim Angert,,,,,668,667
Green,45%,EPSM2: First Half Cost,80d,9/13/2021,12/31/2021,,188FS +55d,,,,669,668
Gray,45%,EPSM2: Second Half Cost,41d,1/3/2022,2/28/2022,,669,,,,670,668
Gray,100%,Batteries,30d,9/13/2021,10/22/2021,Tim Angert,188FS +55d,,,,671,667
Gray,100%,Camera Lenses,30d,9/13/2021,10/22/2021,Tim Angert,188FS +55d,,,,672,667
Gray,100%,Cameras,30d,9/13/2021,10/22/2021,Tim Angert,188FS +55d,,,,673,667
Gray,100%,IMU,30d,9/13/2021,10/22/2021,Tim Angert,188FS +55d,,,,674,667
Gray,100%,Line lasers,30d,9/13/2021,10/22/2021,Tim Angert,188FS +55d,,,,675,667
Gray,100%,Peripheral Computer,30d,9/13/2021,10/22/2021,Tim Angert,188FS +55d,,,,676,667
Gray,100%,Central Computer,30d,9/13/2021,10/22/2021,Tim Angert,188FS +55d,,,,677,667
Gray,100%,Central Wifi,30d,9/13/2021,10/22/2021,Tim Angert,188FS +55d,,,,678,667
Red,0%,Antennas,49d,9/13/2021,11/18/2021,Tim Angert,188FS +55d,,,,679,667
Gray,100%,Sun Sensor,30d,9/13/2021,10/22/2021,Tim Angert,188FS +55d,,,,680,667
Gray,100%,Motors,30d,9/13/2021,10/22/2021,Tim Angert,188FS +55d,,,,681,667
Green,0%,Heater Control & Power Switching Boards,60d,9/13/2021,12/3/2021,"Lydia Schweitzer, Saksham Khurana",188FS +55d,"**Does this task capture everything (design, fab separate tasks)?AVI Chuck & Lou",39400,20000,682,667
Gray,100%,HDRMs,30d,9/13/2021,10/22/2021,Tim Angert,188FS +55d,,0,,683,667
Gray,100%,SEC,30d,9/13/2021,10/22/2021,Tim Angert,188FS +55d,,,,684,667
Green,0%,PCB connectors,69d,9/13/2021,12/16/2021,Tim Angert,188FS +55d,,,,685,667
Green,0%,Wire harness connectors,69d,9/13/2021,12/16/2021,Tim Angert,188FS +55d,,,,686,667
Gray,,GSE Board,41d,12/31/2021,2/28/2022,,,From budget?AVI,,,687,667
Gray,,Rev B,0,12/31/2021,12/31/2021,,,From budget?AVI,500,,688,687
Gray,,Rev C,0,1/31/2022,1/31/2022,,,From budget?AVI,500,,689,687
Gray,,Rev F,0,2/28/2022,2/28/2022,,,From budget?AVI,1500,,690,687
Gray,,DC-DC Board,41d,12/31/2021,2/28/2022,,,From budget?AVI,,,691,667
Gray,,Rev B,1d,12/31/2021,12/31/2021,,,From budget?AVI,500,,692,691
Gray,,Rev C,0,1/31/2022,1/31/2022,,,From budget?AVI,500,,693,691
Gray,,Rev F,0,2/28/2022,2/28/2022,,,From budget?AVI,1500,,694,691
Gray,,EPSM,41d,12/31/2021,2/28/2022,,,From budget?AVI,,,695,667
Gray,,Flight Procurement 1st Half,0,12/31/2021,12/31/2021,,,From budget?AVI,42000,,696,668
Gray,,Flight Procurement 2nd Half,0,2/28/2022,2/28/2022,,,From budget?AVI,21000,,697,668
Gray,100%,Small supporting components,30d,9/13/2021,10/22/2021,Tim Angert,,,,,698,667
Gray,100%,Power control chips (TI TPS1H100-Q1) procurement,30d,9/13/2021,10/22/2021,Tim Angert,188FS +55d,,,,699,698
Gray,100%,Power control chips (TI TPS1H200-Q1) procurement,30d,9/13/2021,10/22/2021,Tim Angert,188FS +55d,,,,700,698
Green,19%,Wire Harnessing,110.5d,10/29/2021,4/1/2022,Tim Angert,,,,,701,579
Green,96%,Initial Harness Design,23d,10/29/2021,11/30/2021,,,,,,702,701
Gray,100%,Point-to-Point Diagram,23d,10/29/2021,11/30/2021,,,Tim-approved,,,703,702
Green,90%,Connector Specification,14d,11/11/2021,11/30/2021,,703FF,Tim-approved,,,704,702
Green,9%,Harness Prototyping,41d,11/20/2021,1/14/2022,,,,,,705,701
Gray,100%,3D Print Loaf,3d,11/20/2021,11/23/2021,,,Tim-approved,,,706,705
Green,10%,Fitment Test / Length Determinations,8d,11/24/2021,12/3/2021,,706,Tim-approved,,,707,705
Yellow,0%,Drawing Finalization,33d,12/1/2021,1/14/2022,,"703, 706FF",,,,708,705
Green,13%,EDU Harness Manufacturing,56d,11/11/2021,1/27/2022,,,,,,709,701
Green,6%,Connector Procurement (EDU and Flight),56d,11/11/2021,1/27/2022,,,,,,710,709
Green,20%,Connector Quoting,23d,11/11/2021,12/13/2021,,704SS,Tim-approved,,,711,710
Green,0%,Order Connectors,27d,11/11/2021,12/17/2021,,711SS,Tim-approved,,,712,710
Gray,0%,Receive Connectors,26d,12/23/2021,1/27/2022,,712FS +3d,Tim-approved,,,713,710
Green,22%,EDU Harness Manufacturing (In-House),46d,11/15/2021,1/17/2022,,,,,,714,709
Green,80%,WHMA-60 Soldering Training,15d,11/15/2021,12/3/2021,,,Tim-approved. **Check term in S&MA.,,0,715,714
Yellow,0%,IPC J Soldering Training,1w,12/1/2021,12/7/2021,,,Tim-approved. **Check term in S&MA.,,0,716,714
Yellow,0%,In-House Manufacturing,6w,11/30/2021,1/10/2022,,,**Require complete Loaf with board mockups. Work backwards from when AVI needs harness?AVI. Tim rough duration.,18500,,717,714
Gray,0%,Power & Signal Integrity Checking,1w,1/11/2022,1/17/2022,,717,Duration?AVI?MEC Do not use FlatSat due to schedule #BLOCKED,,,718,714
Gray,0%,Flight Harness Manufacturing,53.5d,1/18/2022,4/1/2022,,,,21000,,719,701
Gray,0%,In-House Flight Harness Manufacturing (80% goal),6w,1/18/2022,2/28/2022,,718,Tim rough % and duration.,,,720,719
Gray,0%,Out-of-House Flight Harness Manufacturing,53.5d,1/18/2022,4/1/2022,,,,,,721,719
Gray,0%,Get Harness Quotes,2.5w,1/18/2022,2/3/2022,,718,Tim rough duration.,,,722,721
Gray,0%,Out-of-House Declaration Deadline,0,2/3/2022,2/3/2022,,724SS,Set with 8w lead time from manfacuturing receipt,,,723,721
Gray,0%,Out-of-House Manufacturing (20% goal),8w,2/3/2022,3/31/2022,,722,**Date work backwards from when AVI needs harness?AVI,,,724,721
Gray,0%,Flight Harness Receipt,1d,3/31/2022,4/1/2022,,724,**Get duration from Tim.,,,725,721
Gray,,Procurement,0,3/31/2022,3/31/2022,,,,,,726,721
Gray,,Custom tooling for solar harness installation,0,3/31/2022,3/31/2022,,,From budget?MEC,,250,727,321
Gray,,Fixture for electrical umbilical installation,0,3/31/2022,3/31/2022,,,,,,728,321
Green,29%,Mechanical,241.5d,5/11/2021,4/13/2022,,,,,,729,579
Gray,100%,Mechanical Fabrication (Pre-Loaf),166d,5/11/2021,12/28/2021,Tim Angert,,"Closed out, do NOT use for future dependencies - Scher",,,730,729
Gray,100%,Flight part drawings,166d,5/11/2021,12/28/2021,Daniel Scher,"403, 1015FF",,,,731,730
Gray,100%,Send Parts Drawings out for Quote,11d,7/31/2021,8/13/2021,Tim Angert,,,,,732,730
Gray,100%,Order external parts,5d,8/16/2021,8/20/2021,Tim Angert,732,,,,733,730
Gray,100%,Machine all in-house structural components,84d,8/19/2021,12/14/2021,Tim Angert,,,,,734,730
Green,30%,Mechanical Redesign (Post-Loaf),32d,11/15/2021,12/28/2021,Daniel Scher,,,,,735,729
Green,74%,CAD Revision,19.5d,11/15/2021,12/10/2021,Daniel Scher,,,,,736,735
Green,90%,Freeze external connector placement for boards,11d,11/15/2021,11/29/2021,Daniel Scher,,Depends in part on quote/advice from Glenair,,,737,736
Gray,100%,Freeze internal connector placement for boards,6d,11/15/2021,11/22/2021,Daniel Scher,,Depends on verification of connections in MR-AVI-0041,,,738,736
Yellow,60%,Export frozen DXFs of board layouts for avionics layout,1.5d,11/30/2021,12/1/2021,Daniel Scher,"738, 737",Involves relatively simple CAD work to place connector models,,,739,736
Gray,100%,Specify heater P/N and placement for LOAF heaters,2d,11/22/2021,11/23/2021,Daniel Scher,,This is actually more of a thermal TODO,,,740,736
Yellow,90%,Freeze design of LOAF,3d,11/30/2021,12/2/2021,Daniel Scher,737,Drawing and machining may actually begin prior to freeze,,,741,736
Red,90%,Specify all spacely connectors,6d,11/17/2021,11/24/2021,Daniel Scher,,Calvin,,,742,736
Gray,100%,Export Tx2 interface board,0.5d,11/25/2021,11/25/2021,Daniel Scher,742,Calvin,,,743,736
Yellow,20%,Redesign line laser mounts,2d,12/1/2021,12/2/2021,Daniel Scher,,REVISE,,,744,736
Gray,100%,Freeze design of spacely enclosure,6d,11/17/2021,11/24/2021,Daniel Scher,742FF,Calvin,,,745,736
Red,70%,Freeze truss stiffener design,2d,11/25/2021,11/26/2021,Daniel Scher,745,Calvin,,,746,736
Red,70%,Freeze NSS stiffener design,3d,11/22/2021,11/24/2021,Daniel Scher,,Calvin,,,747,736
Yellow,15%,CAD harnesses,5d,12/1/2021,12/8/2021,Daniel Scher,"739, 742",,,,748,736
Yellow,20%,Freeze radiator design,2d,12/5/2021,12/6/2021,Daniel Scher,,Calvin,,,749,736
Yellow,10%,Freeze chassis shell,2d,12/8/2021,12/10/2021,Daniel Scher,"748, 749",Calvin,,,750,736
Yellow,0%,Overall Mechanical Design Freeze,1d,12/10/2021,12/13/2021,Daniel Scher,736,,,,751,735
Green,12%,Mechanical Drawings of Incomplete or New Parts,20.5d,11/25/2021,12/23/2021,Daniel Scher,,,,,752,735
Yellow,0%,Loaf Drawings,2d,12/3/2021,12/6/2021,Daniel Scher,741,Calvin or Daniel,,,753,752
Yellow,0%,NSS Stiffener Drawings,2d,11/29/2021,11/30/2021,Daniel Scher,"746, 747",Calvin or Daniel,,,754,752
Gray,100%,Spacely Enclosure Drawings,2d,11/25/2021,11/26/2021,Daniel Scher,745,Calvin,,,755,752
Gray,0%,Radiator Drawings,2d,12/13/2021,12/15/2021,Daniel Scher,751,Calvin,,,756,752
Yellow,0%,Revise Line Laser Mount Drawings,1d,12/3/2021,12/3/2021,Daniel Scher,744,,,,757,752
Gray,0%,Chassis shell drawing,2d,12/13/2021,12/15/2021,Daniel Scher,751,Calvin,,,758,752
Gray,0%,Camera Shroud Drawing,1d,12/15/2021,12/16/2021,Daniel Scher,"753, 754, 755, 756, 757, 758",Calvin,,,759,752
Gray,0%,Drawing revision buffer,5d,12/16/2021,12/23/2021,Daniel Scher,"753, 754, 755, 756, 757, 758, 759",,,,760,752
Gray,0%,Grounding and Bonding,11.5d,12/13/2021,12/28/2021,Daniel Scher,,,,,761,735
Gray,0%,Analytically verify grounding path of all structural components,3d,12/13/2021,12/16/2021,Daniel Scher,751,May begin some parts before full design freeze,,,762,585
Gray,0%,Experimentally verify bonding between critical members,6d,12/21/2021,12/28/2021,Daniel Scher,772,,,,763,585
Gray,0%,Revised Mass Models,3.5d,12/13/2021,12/16/2021,Daniel Scher,,,,,764,735
Gray,0%,Design revised NSS DPM Model,0.5d,12/13/2021,12/13/2021,Daniel Scher,751,,,,765,764
Gray,0%,Design revised NSS SM Model,0.5d,12/13/2021,12/13/2021,Daniel Scher,751,,,,766,764
Gray,0%,Design revised 253-016 Model,0.5d,12/13/2021,12/13/2021,Daniel Scher,751,,,,767,764
Gray,0%,Create drawings for all mass models,0.5d,12/13/2021,12/13/2021,Daniel Scher,751,,,,768,764
Gray,0%,Mass Model Design Buffer,3d,12/14/2021,12/16/2021,Daniel Scher,"765, 766, 767, 768",,,,769,764
Green,0%,Mechanical Revised EM Fabrication (Post-Loaf),37d,11/25/2021,1/14/2022,Daniel Scher,,,,,770,729
Green,0%,Spacely Enclosure Prototype Machining,4d,11/25/2021,11/30/2021,Daniel Scher,755SS,,,,771,770
Yellow,0%,Loaf Prototype Machining,10d,12/7/2021,12/20/2021,Daniel Scher,753,Aim to actually start on 11/23-24,,,772,770
Yellow,0%,NSS Stiffener Prototype Machining,5d,12/1/2021,12/7/2021,Daniel Scher,754,,,,773,770
Yellow,0%,Line Laser Mount Prototype Machining,3d,12/6/2021,12/8/2021,Daniel Scher,757,Try to send this out of house,,,774,770
Gray,0%,Radiator Prototype Machining,3d,12/15/2021,12/20/2021,Daniel Scher,756,May be done in parallel with other fab,,,775,770
Gray,0%,Camera Shroud Prototype Machining,3.5d,12/16/2021,12/21/2021,Daniel Scher,759,Quote out of house,,,776,770
Gray,0%,Modify TerraMule Shell,2d,12/15/2021,12/17/2021,Daniel Scher,758,Should be done by two people,,,777,770
Gray,0%,Revised Mass Model Machining,2d,12/17/2021,12/20/2021,Daniel Scher,764,May be largely manual tasks,,,778,770
Gray,0%,Fabrication buffer,10d,12/22/2021,1/4/2022,Daniel Scher,"772, 773, 771, 775, 774, 776, 777, 778",,,,779,770
Gray,0%,Assemble Revised EM Structure,5d,1/5/2022,1/11/2022,Daniel Scher,779,,,,780,770
Gray,,Integrate Avionics into Revised EM,3d,1/12/2022,1/14/2022,Daniel Scher,780,Also dependent on completion of boards,,,781,770
Gray,,Additional Procurement,0,12/31/2021,12/31/2021,,,From budget?MEC,,,782,729
Gray,,Loaf Billet,0,12/31/2021,12/31/2021,,,From budget?MEC,3250,,783,782
Gray,,Loaf Alodine,0,12/31/2021,12/31/2021,,,From budget?MEC,500,,784,782
Gray,,Endmills and misc cutters for machining,0,12/31/2021,12/31/2021,,,From budget?MEC,,300,785,782
Gray,,"Misc fabrication consumables (deburring tools, fasteners)",0,12/31/2021,12/31/2021,,,From budget?MEC,,225,786,782
Gray,,Materials for composite chassis cutting/sanding,0,12/31/2021,12/31/2021,,,From budget?MEC,,125,787,782
Gray,,Billet aluminum for spacely enclosure,0,12/31/2021,12/31/2021,,,From budget?MEC,,300,788,782
Gray,,Billet Aluminum for Loaf primary structure,0,12/31/2021,12/31/2021,,,From budget?MEC,,300,789,782
Gray,,Billet aluminum for laser mounts,0,12/31/2021,12/31/2021,,,From budget?MEC,,150,790,782
Gray,,Additional ANE-46505 epoxy for prototyping,0,12/31/2021,12/31/2021,,,From budget?MEC,,500,791,782
Gray,,Potted inserts for prototype radiator,0,12/31/2021,12/31/2021,,,From budget?MEC,,300,792,782
Gray,,Bar stock PEEK for camera shroud,0,12/31/2021,12/31/2021,,,From budget?MEC,,500,793,782
Gray,,Sheet aluminum for chassis shell template,0,12/31/2021,12/31/2021,,,From budget?MEC,,150,794,782
Gray,,Finishing of aluminum components,0,12/31/2021,12/31/2021,,,From budget?MEC,,0,795,782
Gray,,Machined brackets and struts (Conturo Prototyping),0,12/31/2021,12/31/2021,,,From budget?MEC,14738.97,,796,782
Gray,0%,Verify Revised Chassis Structure,20d,12/21/2021,1/17/2022,Daniel Scher,,,,,797,729
Gray,0%,Revised EM Vibe Test,1d,1/17/2022,1/17/2022,Daniel Scher,770,This will cost money,,8000,798,797
Gray,0%,Revised EM Vibe Report,3d,12/21/2021,12/23/2021,Daniel Scher,772,,,,799,797
Green,4%,ANSYS FEA Model,113.5d,11/5/2021,4/13/2022,Daniel Scher,,,,,800,729
Gray,,Procure ANSYS Computer,0,1/31/2022,1/31/2022,,,From budget?MEC,,,801,800
Gray,,Computer,0,1/31/2022,1/31/2022,,,From budget?MEC,,2000,802,801
Gray,,Montior,0,1/31/2022,1/31/2022,,,From budget?MEC,,150,803,801
Gray,,"Keyboard, Mouse, Cables",0,1/31/2022,1/31/2022,,,From budget?MEC,,100,804,801
Green,9%,Solar Panel FEA Model,103.5d,11/5/2021,3/30/2022,Daniel Scher,,,,,805,800
Red,20%,First FEA Model Revision,15d,11/5/2021,11/25/2021,Daniel Scher,807SF,Chris,,,806,805
Green,0%,Calibrate Model w.r.t. Solar EDU Vibe,10d,11/26/2021,12/9/2021,Daniel Scher,952,Chris,,,807,805
Gray,0%,Final FEA Model Revision,10d,3/16/2022,3/30/2022,Daniel Scher,926FF +15d,Chris (maybe),,,808,805
Gray,0%,Wheel Module FEA Model,30d,2/16/2022,3/30/2022,Daniel Scher,,,,,809,800
Gray,0%,Build Model,30d,2/16/2022,3/30/2022,Daniel Scher,926FF +15d,May involve a new person,,,810,809
Green,0%,Chassis FEA Model,105.5d,11/17/2021,4/13/2022,Daniel Scher,,,,,811,800
Green,0%,First FEA Model Revision,30d,11/17/2021,12/28/2021,Daniel Scher,,Taylor,,,812,811
Gray,0%,Calibrate Model w.r.t. Chassis Vibe,20d,2/2/2022,3/2/2022,Daniel Scher,814SF,,,,813,811
Gray,0%,Final FEA Model,30d,3/2/2022,4/13/2022,Daniel Scher,926FF +25d,,,,814,811
Green,3%,Verify Mechanism Function,98d,11/15/2021,3/31/2022,Daniel Scher,,,,,815,729
Green,8%,Wheel Module Verification,47d,11/15/2021,1/18/2022,Daniel Scher,,,,,816,815
Gray,100%,Wheel Module Vibe Test,5d,11/15/2021,11/19/2021,Daniel Scher,,,,0,817,816
Green,0%,Wheel Module Drop Test,46d,11/16/2021,1/18/2022,Daniel Scher,,,,400,818,816
Green,0%,Design and Build Test Fixture,20d,11/16/2021,12/13/2021,Daniel Scher,,Maddie is taking lead on this,,,819,818
Gray,0%,Winter break buffer,20d,12/14/2021,1/10/2022,Daniel Scher,819,,,,820,818
Gray,0%,Write test plan,2d,1/11/2022,1/12/2022,Daniel Scher,820,,,,821,818
Gray,0%,Execute Test,2d,1/13/2022,1/14/2022,Daniel Scher,821,,,,822,818
Gray,0%,Write test report,2d,1/17/2022,1/18/2022,Daniel Scher,822,,,,823,818
Gray,0%,Torque and Cyclic Loads Test,7d,1/6/2022,1/14/2022,Daniel Scher,,,,400,824,816
Gray,0%,Design and Build Test Fixture,2d,1/6/2022,1/7/2022,Daniel Scher,826SF,,,,825,824
Gray,0%,Write test plan,1d,1/10/2022,1/10/2022,Daniel Scher,827SF,,,,826,824
Gray,0%,Execute Test,2d,1/11/2022,1/12/2022,Daniel Scher,832,,,,827,824
Gray,0%,Write test report,2d,1/13/2022,1/14/2022,Daniel Scher,827,,,,828,824
Gray,0%,Psuedo-TVac function and thermal gradient test,7d,1/4/2022,1/12/2022,Daniel Scher,,Requires working vac chamber,,,829,816
Gray,0%,Design and Build Test Fixture,2d,1/4/2022,1/5/2022,Daniel Scher,831SF,,,,830,829
Gray,0%,Write test plan,1d,1/6/2022,1/6/2022,Daniel Scher,832SF,,,,831,829
Gray,0%,Execute Test,2d,1/7/2022,1/10/2022,Daniel Scher,820FF,,,1500,832,829
Gray,0%,Write test report,2d,1/11/2022,1/12/2022,Daniel Scher,832,,,,833,829
Gray,0%,Solar Hinge Verification,64d,12/31/2021,3/31/2022,Daniel Scher,,,,,834,815
Gray,,Test Rig Procurements,0,12/31/2021,12/31/2021,,,From budget?MEC,,,835,834
Gray,,Solar hinge torque testing rig,0,12/31/2021,12/31/2021,,,From budget?MEC,,200,836,835
Gray,,Sun sensor function verification fixture,0,12/31/2021,12/31/2021,,,From budget?MEC,,150,837,835
Gray,,WiFi Antenna test fixture,0,12/31/2021,12/31/2021,,,From budget?MEC,,100,838,835
Gray,0%,Encoder function test,32d,12/31/2021,2/15/2022,Daniel Scher,,,,,839,834
Gray,,Solar encoder testing rig procurement,0,12/31/2021,12/31/2021,,,From budget?MEC,,200,840,839
Gray,0%,Design and Build Test Fixture,3d,2/2/2022,2/7/2022,Daniel Scher,842SF,,,,841,839
Gray,0%,Write test plan,1d,2/7/2022,2/8/2022,Daniel Scher,843SF,,,,842,839
Gray,0%,Execute Test,4d,2/8/2022,2/14/2022,Daniel Scher,844SF,,,,843,839
Gray,0%,Write test report,1d,2/14/2022,2/15/2022,Daniel Scher,845SF,,,,844,839
Gray,0%,Active hinge assembly fitment test without hinge arm,3d,2/15/2022,2/18/2022,Daniel Scher,,,,,845,834
Gray,0%,Design and Build Test Fixture,2d,2/15/2022,2/17/2022,Daniel Scher,847SF,,,,846,845
Gray,0%,Execute Test,1d,2/17/2022,2/18/2022,Daniel Scher,848SF,,,,847,845
Gray,0%,Active hinge assembly fitment test with hinge arm and encoder,10d,2/18/2022,3/4/2022,Daniel Scher,,,,,848,834
Gray,0%,Design and Build Test Fixture,5d,2/18/2022,2/25/2022,Daniel Scher,850SF,,,,849,848
Gray,0%,Write test plan,1d,2/25/2022,2/28/2022,Daniel Scher,851SF,,,,850,848
Gray,0%,Execute Test,2d,2/28/2022,3/2/2022,Daniel Scher,852SF,,,,851,848
Gray,0%,Write test report,2d,3/2/2022,3/4/2022,Daniel Scher,853SF,,,,852,848
Gray,0%,Actuated active hinge control test without hinge arm,8d,3/4/2022,3/16/2022,Daniel Scher,,,,,853,834
Gray,0%,Design and Build Test Fixture,2d,3/4/2022,3/8/2022,Daniel Scher,855SF,,,,854,853
Gray,0%,Write test plan,1d,3/8/2022,3/9/2022,Daniel Scher,856SF,,,,855,853
Gray,0%,Execute Test,3d,3/9/2022,3/14/2022,Daniel Scher,857SF,,,,856,853
Gray,0%,Write test report,2d,3/14/2022,3/16/2022,Daniel Scher,858SF,,,,857,853
Gray,0%,Fully integrated actuated active hinge test,4d,3/16/2022,3/22/2022,Daniel Scher,,,,,858,834
Gray,0%,Write test plan,1d,3/16/2022,3/17/2022,Daniel Scher,860SF,,,,859,858
Gray,0%,Execute Test,1d,3/17/2022,3/18/2022,Daniel Scher,861SF,,,,860,858
Gray,0%,Write test report,2d,3/18/2022,3/22/2022,Daniel Scher,862SF,,,,861,858
Gray,0%,Pseudo-TVac active hinge actuation test,7d,3/22/2022,3/31/2022,Daniel Scher,,,,,862,834
Gray,0%,Design and Build Test Fixture,2d,3/22/2022,3/24/2022,Daniel Scher,864SF,,,,863,862
Gray,0%,Write test plan,1d,3/24/2022,3/25/2022,Daniel Scher,865SF,,,,864,862
Gray,0%,Execute Test,2d,3/25/2022,3/29/2022,Daniel Scher,866SF,,,,865,862
Gray,0%,Write test report,2d,3/29/2022,3/31/2022,Daniel Scher,903FF,,,,866,862
Green,0%,Machine all Tooling/Fixtures for Flight Assembly,82.5d,11/15/2021,3/9/2022,Daniel Scher,,,,,867,729
Gray,,Misc Procurement,21d,12/31/2021,1/31/2022,,,From budget?MEC,,,868,867
Gray,,"Assembly fasteners, adhesives,  TBD",0,12/31/2021,12/31/2021,,,From budget?MEC,500,,869,868
Gray,,FIXTURING - For assembly,0,1/31/2022,1/31/2022,,,From budget?MEC,2000,,870,868
Gray,,Crimp Tools,0,12/31/2021,12/31/2021,,,From budget?MEC,2500,,871,868
Green,0%,Vacuum Chamber Repair,38d,11/15/2021,1/5/2022,Daniel Scher,,,,,872,867
Red,0%,Get flange for turbopump machined,7d,11/15/2021,11/23/2021,Daniel Scher,,Started by Atomatic,,1000,873,872
Green,0%,Obtain gasket and mounting hardware for pumps,10d,11/17/2021,11/30/2021,Daniel Scher,,Calvin is specing this,,300,874,872
Yellow,0%,Install turbopump,1d,12/1/2021,12/1/2021,Daniel Scher,"873, 874",,,,875,872
Yellow,0%,Connect roughing pump directly to bottom of chamber,1d,12/1/2021,12/1/2021,Daniel Scher,875FF,,,,876,872
Yellow,0%,Buffer time for unexpected hardware purchasing or machining,5d,12/2/2021,12/8/2021,Daniel Scher,876,,,,877,872
Yellow,0%,Install thermal plate,4d,12/9/2021,12/14/2021,Daniel Scher,877,,,,878,872
Gray,0%,Fabricate radiation shroud,3d,12/15/2021,12/17/2021,Daniel Scher,878,,,950,879,872
Gray,0%,Build access platform around chamber,3d,12/20/2021,12/22/2021,Daniel Scher,879,,,1200,880,872
Gray,0%,Buffer for uncertainty in build time of thermal plate,10d,12/23/2021,1/5/2022,Daniel Scher,880,,,,881,872
Red,,Other Procurement,,,,,,,,,882,872
Red,,New clamp hardware for vac chamber,0,12/31/2021,12/31/2021,,,,,200,883,882
Red,,Feedthru for liquid nitrogen for vac chamber cold plate,0,12/31/2021,12/31/2021,,,,,500,884,882
Red,,Liquid nitrogen hose connection,0,12/31/2021,12/31/2021,,,,,300,885,882
Red,,Heater blanket for shroud,0,12/31/2021,12/31/2021,,,,,350,886,882
Red,,Actuated valve for controlled feedthru of chilling fluid,0,12/31/2021,12/31/2021,,,,,400,887,882
Red,,Valve control module,0,12/31/2021,12/31/2021,,,,,200,888,882
Red,,Power supply for vac chamber testing,0,12/31/2021,12/31/2021,,,,,500,889,882
Red,,"Chamber cleaning supplies (IPA, wipes, gloves)",0,12/31/2021,12/31/2021,,,,,400,890,882
Red,,Vaccuum compatible wiring,0,12/31/2021,12/31/2021,,,,,200,891,882
Gray,0%,Fixtures for Solar Panel Assembly,3d,3/4/2022,3/9/2022,Daniel Scher,,,,,892,867
Gray,0%,Additional hardware for RASS,3d,3/4/2022,3/9/2022,Daniel Scher,1210SF,,,,893,892
Gray,0%,Fixtures for Wheel Module Assembly,7d,1/10/2022,1/19/2022,Daniel Scher,,,,,894,867
Gray,0%,Supporting mount for bearing press,2d,1/17/2022,1/19/2022,Daniel Scher,916SF -5d,,,200,895,894
Gray,0%,Heated press tool for wheel hub,7d,1/10/2022,1/19/2022,Daniel Scher,916SF -5d,Try to hand this off to someone else,,250,896,894
Yellow,0%,Fixtures for Chassis Assembly,66d,12/6/2021,3/8/2022,Daniel Scher,,,,,897,867
Yellow,0%,Template for chassis shell machining,4d,12/6/2021,12/10/2021,Daniel Scher,777FF -5d,,,,898,897
Gray,0%,Calibration rig(s) for perception hardware,5d,3/1/2022,3/8/2022,Daniel Scher,1215FF -5d,,,,899,897
Red,0%,Fixtures for wire harnessing,5d,11/16/2021,11/22/2021,Daniel Scher,,Dependent on wire harnessing fab plans,,,900,867
Red,0%,Loaf mannequin for building internal harnesses,5d,11/16/2021,11/22/2021,Daniel Scher,717SF -5d,,,450,901,900
Gray,0%,TO BE DETERMINED,20d,1/28/2022,2/24/2022,Daniel Scher,904FF,,,,902,867
Yellow,0%,Flight Hardware Build Post-Loaf,87d,11/30/2021,3/31/2022,Daniel Scher,,"Strongly consider re-use of EM parts, where applicable",,,903,729
Gray,0%,Machine Flight Hardware,23d,1/25/2022,2/24/2022,Daniel Scher,,buffer period accounts for possibility of adjustments needed following vibe,,,904,903
Gray,0%,Loaf Flight Machining,5d,2/1/2022,2/7/2022,Daniel Scher,797FS +10d,Will want a 2nd loaf regardless of reuse for bench testing,,,905,904
Gray,0%,NSS Stiffener Flight Machining,2d,2/8/2022,2/9/2022,Daniel Scher,905,,,,906,904
Gray,0%,Spacely Enclosure Flight Machining,2d,2/10/2022,2/11/2022,Daniel Scher,906,,,,907,904
Gray,0%,Radiator Flight Machining,3d,1/25/2022,1/27/2022,Daniel Scher,,,,,908,904
Gray,,Radiator Panel Potting,2d,1/28/2022,1/31/2022,Daniel Scher,908,,,,909,904
Gray,0%,Line Laser Mount Flight Machining,2d,1/25/2022,1/26/2022,Daniel Scher,,Very likely reuse,,,910,904
Gray,0%,Camera Shroud Flight Machining,2d,2/14/2022,2/15/2022,Daniel Scher,907,,,,911,904
Gray,0%,Machine Flight Chassis,2d,1/28/2022,1/31/2022,Daniel Scher,908,Involves 2 people,,,912,904
Gray,0%,Fabrication buffer,7d,2/16/2022,2/24/2022,Daniel Scher,"905, 906, 907, 908, 910, 911, 912",,,,913,904
Gray,0%,Alodine Machined Parts,7d,2/25/2022,3/7/2022,Daniel Scher,904,,,,914,903
Gray,0%,Develop assembly plans,20d,1/26/2022,2/23/2022,Daniel Scher,,Maybe involve spring semester people in this,,,915,903
Gray,0%,Wheel Module Assembly Plans,20d,1/26/2022,2/23/2022,Daniel Scher,926FF -10d,,,,916,915
Gray,0%,Solar Panel Assembly Plans,20d,1/26/2022,2/23/2022,Daniel Scher,926FF -10d,,,,917,915
Gray,0%,Solar Hinge Assembly Plans,20d,1/26/2022,2/23/2022,Daniel Scher,926FF -10d,,,,918,915
Gray,0%,Loaf Assembly Plans,20d,1/26/2022,2/23/2022,Daniel Scher,926FF -10d,,,,919,915
Gray,0%,Chassis Assembly Plans,20d,1/26/2022,2/23/2022,Daniel Scher,926FF -10d,,,,920,915
Gray,0%,Inspect/QA/Modify All Received Parts,1d,3/8/2022,3/8/2022,Daniel Scher,,,,,921,903
Gray,0%,Verify mass of received parts,1d,3/8/2022,3/8/2022,Daniel Scher,914,,,,922,921
Gray,0%,Verify critical dimensions,0.5d,3/8/2022,3/8/2022,Daniel Scher,914,,,,923,921
Gray,0%,Inspect finish of received parts,0.5d,3/8/2022,3/8/2022,Daniel Scher,914,,,,924,921
Gray,0%,Insert helicoils where relevant,0.5d,3/8/2022,3/8/2022,Daniel Scher,914,,,,925,921
Gray,0%,All mechanical parts in-hand,0.5d,3/9/2022,3/9/2022,Daniel Scher,921,All mechanical complete at this point,,,926,903
Gray,0%,Pre-integration Mechanical Assembly,22.5d,2/2/2022,3/4/2022,Daniel Scher,,,,,927,903
Gray,0%,Assemble Wheel Module,2d,2/2/2022,2/4/2022,Daniel Scher,896FS +10d,,,,928,927
Gray,0%,Attach Wheel Modules & Corner brackets to Chassis Shell,3d,2/25/2022,3/1/2022,Daniel Scher,"928, 913",,,,929,927
Gray,0%,Buffer,3d,3/2/2022,3/4/2022,Daniel Scher,929,,,,930,927
Gray,0%,Flight Structure Ready for Avionics Integration,1h,3/9/2022,3/9/2022,Daniel Scher,"930, 926","Structure is in cleanroom, on RASSS, awaiting integration",,,931,903
Gray,,Fixture Procurements,0,3/31/2022,3/31/2022,,,From budget?MEC,,,932,903
Gray,,Fixture for wheel module integration,0,3/31/2022,3/31/2022,,,From budget?MEC,,300,933,932
Gray,,Fixture for solar panel installation,0,3/31/2022,3/31/2022,,,From budget?MEC,,300,934,932
Gray,,Fixture for thermal film installation,0,3/31/2022,3/31/2022,,,From budget?MEC,,350,935,932
Gray,,Fixture for NSS integration,0,3/31/2022,3/31/2022,,,From budget?MEC,,1000,936,932
Yellow,,Consumables,44d,11/30/2021,1/31/2022,,,From budget?MEC,,,937,903
Yellow,,Print filament,1d,11/30/2021,11/30/2021,,,From budget?MEC,,250,938,937
Yellow,,Loctite coating,0,11/30/2021,11/30/2021,,,From budget?MEC,,350,939,937
Gray,,"Tape (Kapton, teflon cushion, copper)",0,1/31/2022,1/31/2022,,,From budget?MEC,,450,940,937
Yellow,,Thermal Procurement,64d,11/30/2021,2/28/2022,,,From budget?MEC,,,941,579
Gray,,MLI-C,0,12/31/2021,12/31/2021,,,6768,,,942,941
Gray,,MLI-F,0,2/28/2022,2/28/2022,,,6774,,,943,941
Yellow,,Custom thermal film,0,11/30/2021,11/30/2021,,,From budget?MEC,,3875,944,941
Green,66%,Solar Panel Procurement,201d,6/1/2021,3/8/2022,Tim Angert,,,,,945,579
Gray,100%,Order placed,5d,6/1/2021,6/7/2021,Tim Angert,1016,,,,946,945
Gray,100%,Fitment Substrate manufacture,5d,6/8/2021,6/14/2021,Tim Angert,946,,,,947,945
Gray,100%,Flight Substrate Procurement,75d,6/1/2021,9/13/2021,Tim Angert,1016,,,,948,945
Gray,100%,EDU Substrate Manufacture,15d,9/14/2021,10/4/2021,Tim Angert,948,,,,949,945
Gray,100%,EDU Panel assembly (external),30d,10/5/2021,11/15/2021,Tim Angert,949,,,,950,945
Gray,100%,EDU panel receipt,1d,11/16/2021,11/16/2021,Tim Angert,950,,,,951,945
Gray,100%,EDU Panel Vibe,7d,11/17/2021,11/25/2021,Daniel Scher,951,,,2600,952,945
Green,50%,EDU Vibe Report,3d,11/26/2021,11/30/2021,Daniel Scher,952,,,,953,945
Yellow,0%,Update Flight Panel Design + Assembly Documentation,31d,12/1/2021,1/12/2022,"Daniel Scher, Emilio",,,,,954,945
Yellow,0%,Implement noted changes from EDU assembly to assembly documentation,31d,12/1/2021,1/12/2022,Daniel Scher,953,,,,955,954
Yellow,0%,GMSM Shim Design + Fab,7d,12/1/2021,12/9/2021,Daniel Scher,953,,,,956,954
Gray,0%,Flight Substrate manufacture,10d,1/13/2022,1/26/2022,Tim Angert,954,,,,957,945
Gray,0%,Flight panel assembly (external),28d,1/27/2022,3/7/2022,Tim Angert,957,,,63775,958,945
Gray,0%,Flight panel receipt,1d,3/8/2022,3/8/2022,Tim Angert,958,,,600,959,945
Green,2%,FlatSat Development,21d,11/12/2021,12/10/2021,,,,,,960,579
Yellow,5%,FlatSat Test Plan (Multiboard Test Plan),10d,11/29/2021,12/10/2021,Lydia Schweitzer,,**Duration unknown (only start date known),,,961,960
Green,,FlatSat with existing boards for SW,14d,11/12/2021,12/1/2021,,,More tasks?AVI (multi-board/pre-integration testing tasks) Make sure SOF understands differences vs Rev Fs?SOF?SYS Weekly SOF-AVI IWG tagup?AVI?SOF?SYS,,,962,960
Green,36%,Software,203d,5/11/2021,2/17/2022,tenzinc@andrew.cmu.edu,,,,,963,579
Gray,100%,Flight Software Detail Design Summit,28d,5/11/2021,6/17/2021,tenzinc@andrew.cmu.edu,403,,,,964,963
Green,50%,Flight Software Release 1,128d,6/18/2021,12/14/2021,tenzinc@andrew.cmu.edu,,,,,965,963
Gray,100%,Flight software basic config setup,83d,6/18/2021,10/12/2021,tenzinc@andrew.cmu.edu,964,,,,966,965
Green,33%,On Rover Communications Demonstration,43d,10/13/2021,12/10/2021,tenzinc@andrew.cmu.edu,,,,,967,965
Green,20%,"Peripheral computer, central computer, IOBC IF board, motor control board, and GSE port setup and tested on flatsat",35d,10/13/2021,11/30/2021,tenzinc@andrew.cmu.edu,966,,,,968,967
Red,0%,Masten Mock computer and WiFi system setup and tested,20d,10/27/2021,11/23/2021,tenzinc@andrew.cmu.edu,966FS +10d,,,,969,967
Green,60%,rover messages repo has all message required for testing,10d,11/16/2021,11/29/2021,tenzinc@andrew.cmu.edu,1054,,,,970,967
Red,0%,masten mock software has wired and wireless connection capability,3d,11/24/2021,11/26/2021,tenzinc@andrew.cmu.edu,969,,,,971,967
Red,80%,master comms msp receives commands and sends response to PC,30d,10/13/2021,11/23/2021,tenzinc@andrew.cmu.edu,966,,,,972,967
Green,30%,"motor control software receives commands, actuates motor and sends health message",35d,10/13/2021,11/30/2021,tenzinc@andrew.cmu.edu,966,,,,973,967
Green,40%,peripheral computer - master MSP software functionality complete,35d,10/13/2021,11/30/2021,tenzinc@andrew.cmu.edu,966,,,,974,967
Yellow,0%,motor control board flashed from GSE port,4d,12/1/2021,12/6/2021,tenzinc@andrew.cmu.edu,"973, 968",,,,975,967
Yellow,0%,Master MSP flashed from GSE port,4d,12/1/2021,12/6/2021,tenzinc@andrew.cmu.edu,"972, 968",,,,976,967
Yellow,0%,IOBC flashed from GSE port,4d,12/1/2021,12/6/2021,tenzinc@andrew.cmu.edu,"974, 968",,,,977,967
Yellow,0%,complete test from flashing hardware to sending command from PC,3d,12/7/2021,12/9/2021,tenzinc@andrew.cmu.edu,"975, 976, 977",,,,978,967
Yellow,0%,test report and evidence complete,1d,12/10/2021,12/10/2021,tenzinc@andrew.cmu.edu,978,,,,979,967
Green,15%,Rover Lander Communications Demo,45d,10/13/2021,12/14/2021,tenzinc@andrew.cmu.edu,,,,,980,965
Green,0%,mission control software can receive and store peripheral health messages,10d,11/16/2021,11/29/2021,tenzinc@andrew.cmu.edu,1054,,,,981,980
Green,0%,mission control software has wireless wired switch command enabled,10d,11/16/2021,11/29/2021,tenzinc@andrew.cmu.edu,1054,,,,982,980
Yellow,0%,TX2i flashed from GSE port,3d,12/1/2021,12/3/2021,tenzinc@andrew.cmu.edu,968,,,,983,980
Green,0%,tx2i peripheral computer interface sends and receives data and commands,35d,10/13/2021,11/30/2021,tenzinc@andrew.cmu.edu,966,,,,984,980
Green,60%,peripheral WiFi software sends and receives wireless and wired data,35d,10/13/2021,11/30/2021,tenzinc@andrew.cmu.edu,966,,,,985,980
Yellow,0%,"rover software uploaded over WiFi, with only GSE port used to connect",2d,12/6/2021,12/7/2021,tenzinc@andrew.cmu.edu,"983, 984",,,,986,980
Yellow,0%,"test of sending command to enable wireless, establish wireless connection, send motor command, received peripehral health message",3d,12/6/2021,12/8/2021,tenzinc@andrew.cmu.edu,"983, 981, 982, 971",,,,987,980
Yellow,0%,test report complete,1d,12/9/2021,12/9/2021,tenzinc@andrew.cmu.edu,987,,,,988,980
Yellow,0%,peripheral wifi hardware installed on flatsat and flashed through GSE port,10d,12/1/2021,12/14/2021,tenzinc@andrew.cmu.edu,985,,,,989,980
Green,0%,peripheral computer software -rs422 mux control and data functionality working,35d,10/13/2021,11/30/2021,tenzinc@andrew.cmu.edu,966,,,,990,980
Green,0%,Autonomy Software Demonstrations,35d,10/13/2021,11/30/2021,,,,,,991,965
Green,0%,Image and Science Data Returning,35d,10/13/2021,11/30/2021,tenzinc@andrew.cmu.edu,966,,,,992,991
Green,0%,Flight Software Release 2 - autonomous navigation,70d,11/10/2021,2/15/2022,tenzinc@andrew.cmu.edu,,,,,993,963
Green,0%,Motor Velocity Driving demonstration,25d,11/17/2021,12/21/2021,tenzinc@andrew.cmu.edu,,,,,994,993
Gray,0%,Power Switching and Control Demonstration,10d,12/22/2021,1/4/2022,tenzinc@andrew.cmu.edu,,,,,995,993
Gray,0%,Lander Power Signal Control Demonstration,20d,1/19/2022,2/15/2022,tenzinc@andrew.cmu.edu,,,,,996,993
Gray,0%,Drive Arc Driving,20d,12/22/2021,1/18/2022,tenzinc@andrew.cmu.edu,,,,,997,993
Yellow,0%,Basic Survival Behaviour (orient and charge),20d,12/10/2021,1/6/2022,tenzinc@andrew.cmu.edu,978,,,,998,993
Red,0%,Basic stereo perception,10d,11/10/2021,11/23/2021,tenzinc@andrew.cmu.edu,,,,,999,993
Green,0%,Mapping on flat terrain,10d,11/24/2021,12/7/2021,tenzinc@andrew.cmu.edu,,,,,1000,993
Green,0%,Rover drives on flat terrain autonomous,10d,11/24/2021,12/7/2021,tenzinc@andrew.cmu.edu,,,,,1001,993
Yellow,0%,Basic survival behaviour,10d,12/8/2021,12/21/2021,tenzinc@andrew.cmu.edu,,,,,1002,993
Yellow,0%,Rover drives in illuminated terrain with craters and rocks,10d,12/8/2021,12/21/2021,tenzinc@andrew.cmu.edu,,,,,1003,993
Gray,0%,Flight Software Release 3 - dark navigation,30d,1/7/2022,2/17/2022,tenzinc@andrew.cmu.edu,998,,,,1004,963
Red,76%,Thermal,144d,5/11/2021,11/26/2021,,,,,,1005,579
Gray,100%,MLI and thermal film procurement,37d,6/8/2021,7/28/2021,Paulo R.M.Fisch,403FS +20d,,,,1006,1005
Gray,100%,Heater procurement,10d,5/11/2021,5/24/2021,Paulo R.M.Fisch,403,,,,1007,1005
Red,20%,MLI Fitment Model,20d,11/1/2021,11/26/2021,Daniel Scher,,,,,1008,1005
Green,56%,Loaf,62d,9/22/2021,12/16/2021,,,,,,1009,579
Gray,100%,Loaf Preliminary Design and Simulation (1 slice),36d,9/22/2021,11/10/2021,"Daniel Scher, Paulo R.M.Fisch",,Predecessors?SYS,,,1010,1009
Red,0%,Definition of Thermal Dimensions for Loaf,15d,11/4/2021,11/24/2021,Paulo R.M.Fisch,,,,,1011,1009
Yellow,0%,Loaf Design,3d,11/30/2021,12/2/2021,,"620, 1010, 1011FF",Still weird?MEC,,,1012,1009
Yellow,0%,Loaf Manufacturing,10d,12/3/2021,12/16/2021,Paulo R.M.Fisch,1012,,,,1013,1009
Gray,100%,Power,20d,5/11/2021,6/7/2021,,,,,,1014,579
Gray,100%,Actuator design,20d,5/11/2021,6/7/2021,Emilio,403,,,,1015,1014
Gray,100%,Panel  design,15d,5/11/2021,5/31/2021,Emilio,403,,,,1016,1014
Green,59%,Simulation Environment,176d,5/11/2021,1/11/2022,Olivia Corrodi,,,,,1017,404
Gray,100%,Gazebo Release one,46d,5/11/2021,7/13/2021,Olivia Corrodi,,,,,1018,1017
Gray,100%,Updated DEM for landing site,10d,5/11/2021,5/24/2021,Olivia Corrodi,403,,,,1019,1018
Gray,100%,Enable scripted Simulation Runs,30d,6/2/2021,7/13/2021,Olivia Corrodi,1019FS +6d,,,,1020,1018
Green,40%,Gazebo Release 2,110d,7/14/2021,12/14/2021,Olivia Corrodi,,,,,1021,1017
Gray,100%,DSNE Rock Distribution,10d,7/14/2021,7/27/2021,Olivia Corrodi,1018,,,,1022,1021
Gray,100%,DSNE Crater Distribution,10d,7/28/2021,8/10/2021,Olivia Corrodi,1018FS +10d,,,,1023,1021
Green,0%,Automated scripted Simulation Runs with CI,30d,11/3/2021,12/14/2021,Olivia Corrodi,1023FS +60d,,,,1024,1021
Gray,100%,Unreal Release 1,15d,8/22/2021,9/9/2021,Olivia Corrodi,,,,,1025,1017
Gray,100%,Updated DEM for landing site,5d,8/22/2021,8/26/2021,Olivia Corrodi,,,,,1026,1025
Gray,100%,Lunar like lighting,10d,8/27/2021,9/9/2021,Olivia Corrodi,1026,,,,1027,1025
Gray,100%,Unreal Release 2,28d,9/10/2021,10/19/2021,Olivia Corrodi,,,,,1028,1017
Gray,100%,Basic CFS <-> ROS communication,28d,9/10/2021,10/19/2021,Olivia Corrodi,1027,,,,1029,1028
Gray,100%,Lander CAD Model,18d,9/10/2021,10/5/2021,Olivia Corrodi,1027,,,,1030,1028
Gray,100%,Configurable Lunar Lighting,,,,,,,,,1031,1028
Green,52%,Unreal Release 3,30d,10/20/2021,11/30/2021,Olivia Corrodi,,,,,1032,1017
Red,75%,Enable scripted Simulation Runs,21d,10/20/2021,11/17/2021,Olivia Corrodi,1028,,,,1033,1032
Gray,100%,E2E Communication between MCS and Simulator,14d,10/20/2021,11/8/2021,Olivia Corrodi,1028,,,,1034,1032
Green,0%,Bug Fixes for E2E Communication between MCS and Simulator,16d,11/9/2021,11/30/2021,Olivia Corrodi,1034,,,,1035,1032
Red,35%,DSNE Rock Distribution,21d,10/20/2021,11/17/2021,Olivia Corrodi,1028,,,,1036,1032
Yellow,10%,Unreal Release 4,30d,12/1/2021,1/11/2022,Olivia Corrodi,,,,,1037,1017
Yellow,30%,Automated scripted Simulation Runs with CI,30d,12/1/2021,1/11/2022,Olivia Corrodi,1032,,,,1038,1037
Yellow,0%,DSNE Crater Distribution,21d,12/1/2021,12/29/2021,Olivia Corrodi,1032,,,,1039,1037
Yellow,0%,Flight rover model,10d,12/1/2021,12/14/2021,Olivia Corrodi,1032,,,,1040,1037
Yellow,0%,Documentation,30d,12/1/2021,1/11/2022,Olivia Corrodi,1032,,,,1041,1037
Green,0%,System Validation Preparation,147d,6/22/2021,1/12/2022,hjones@andrew.cmu.edu,,,,,1042,404
Green,0%,System Regression Test Suite Specified,147d,6/22/2021,1/12/2022,Siri Maley,,,,,1043,1042
Green,0%,Included Tests Identified,140d,6/22/2021,1/3/2022,"Daniel Scher, Lydia Schweitzer, Siri Maley, tenzinc@andrew.cmu.edu",403FS +30d,,,,1044,1043
Yellow,0%,FIST Specified,9d,12/8/2021,12/20/2021,tenzinc@andrew.cmu.edu,1001,,,,1045,1043
Green,0%,Movement Test Specified,140d,6/22/2021,1/3/2022,Daniel Scher,,,,,1046,1043
Green,0%,Physical Inspection Specified,140d,6/22/2021,1/3/2022,Daniel Scher,,,,,1047,1043
Gray,0%,MR-SYS-0174 Rev Signed,7d,1/4/2022,1/12/2022,Siri Maley,"1044, 1045, 1046, 1047",,,,1048,1043
Gray,0%,System Regression Test Suite Code Written,10d,12/21/2021,1/3/2022,tenzinc@andrew.cmu.edu,"1045, 1001",,,,1049,1042
Green,0%,FIST implemented,80d,9/7/2021,12/27/2021,hjones@andrew.cmu.edu,1043SS +55d,,,,1050,1042
Green,80%,Mission Control Software,148d,6/2/2021,12/24/2021,tenzinc@andrew.cmu.edu,,,,,1051,404
Gray,100%,Release 1,39d,6/2/2021,7/26/2021,tenzinc@andrew.cmu.edu,403FS +16d,,,,1052,1051
Gray,100%,Release 2,34d,7/27/2021,9/10/2021,tenzinc@andrew.cmu.edu,1052,,,,1053,1051
Gray,100%,Release 3,46d,9/13/2021,11/15/2021,tenzinc@andrew.cmu.edu,1053,,,,1054,1051
Green,0%,Release 4,29d,11/16/2021,12/24/2021,tenzinc@andrew.cmu.edu,1054,,,,1055,1051
Green,1%,5.0 System Integration,291d,6/14/2021,7/25/2022,,,,,,1056,1
Yellow,0%,System/General Testing,66d,11/27/2021,2/28/2022,,,,,,1057,1056
Gray,100%,Testbed Additions-Modifications,0,11/27/2021,11/27/2021,,,No cost in budget?SYS,,0,1058,1057
Yellow,,Test instruments,0,11/30/2021,11/30/2021,,,,,600,1059,1057
Gray,,Calibration rig for stereo cameras,0,2/28/2022,2/28/2022,,,,,250,1060,1057
Gray,100%,Avionics testing and analysis equipment,0,11/27/2021,11/27/2021,,,No cost in budget?SYS,,1000,1061,1057
Gray,100%,Software testing equipment,0,11/27/2021,11/27/2021,,,No cost in budget?SYS,,1000,1062,1057
Gray,100%,Thermal testing equipment,0,11/27/2021,11/27/2021,,,No cost in budget?SYS,,1000,1063,1057
Yellow,,Blackout facility,0,11/30/2021,11/30/2021,,,,,2850,1064,1057
Yellow,,Sun light source,0,11/30/2021,11/30/2021,,,,,2650,1065,1057
Yellow,,Sun Sensor emulator for testing (electronics hardware),0,11/30/2021,11/30/2021,,,,,850,1066,1057
Yellow,,Field test supplies for pose estimation testing,0,11/30/2021,11/30/2021,,,,,1350,1067,1057
Yellow,,Brackets/machining to mount LOAF in mobility platform,0,11/30/2021,11/30/2021,,,,,1350,1068,1057
Yellow,,Electronics / Connectors to attach to moblity platform,0,11/30/2021,11/30/2021,,,,,850,1069,1057
Yellow,,SOF Extra Procurement,0,11/30/2021,11/30/2021,,,,,350,1070,1057
Yellow,,Express Deliveries,0,11/30/2021,11/30/2021,,,,,300,1071,1057
Red,,,,,,,,,,,1072,1056
Green,,11/23/21 Meeting Match-Up Check:,235d,6/14/2021,5/9/2022,,,Miro dates are approximate,,,1073,1056
Gray,,Loaf Proto & Spacely Shells Complete,8d,12/20/2021,12/31/2021,,,Matches,,,1074,1073
Gray,,Miro,0,12/31/2021,12/31/2021,,,,,,1075,1074
Gray,,Smartsheet,0,12/20/2021,12/20/2021,,"771FF, 772FF",,,,1076,1074
Gray,,Structural Prototype Complete,6d,1/11/2022,1/20/2022,,,Matches,,,1077,1073
Gray,,Miro,0,1/20/2022,1/20/2022,,,,,,1078,1077
Gray,,Smartsheet,0,1/11/2022,1/11/2022,,780,,,,1079,1077
Gray,,Integrate Rev C Boards,9d,2/15/2022,2/25/2022,,,Assembly time?AVI Smartsheet 1+ week later,,,1080,1073
Gray,,Miro,0,2/15/2022,2/15/2022,,,,,,1081,1080
Gray,,Smartsheet,1d,2/25/2022,2/25/2022,,"599, 612, 625, 638, 651, 664, 682",Need better granularity on HC & PS boards?AVI,,,1082,1080
Gray,,Revised EM Vibe Test (with Rev C Boards),22d,1/17/2022,2/15/2022,,,No matching Smartsheet task because MEC task doesn't depend on Rev C Boards.?MEC,,,1083,1073
Gray,,Miro,1d,2/15/2022,2/15/2022,,,,,,1084,1083
Gray,,Smartsheet,1d,1/17/2022,1/17/2022,,798FF,No matching Smartsheet task because MEC task doesn't depend on Rev C Boards,,,1085,1083
Gray,,All Structure Done,5.625d,3/2/2022,3/9/2022,,,"Not expected to slip, but MEC task needs assembly dependencies.?MEC",,,1086,1073
Gray,,Miro,0,3/2/2022,3/2/2022,,,,,,1087,1086
Gray,,Smartsheet,0,3/9/2022,3/9/2022,,931,"Not expected to slip, but MEC task needs assembly dependencies.?MEC",,,1088,1086
Gray,,Flight Solar Panel Send & Recieve,33d,1/27/2022,3/15/2022,,,Matches,,,1089,1073
Gray,,Miro Send,0,2/15/2022,2/15/2022,,,,,,1090,1089
Gray,,Smartsheet Send,0,1/27/2022,1/27/2022,,958SF,,,,1091,1089
Gray,,Miro Recieve,0,3/15/2022,3/15/2022,,,,,,1092,1089
Gray,,Smartsheet Recieve,0,3/8/2022,3/8/2022,,959FF,,,,1093,1089
Gray,,Wheel Module Assembly,31.5d,2/1/2022,3/16/2022,,,Matches,,,1094,1073
Gray,,Miro,28d,2/1/2022,3/10/2022,,,,,,1095,1094
Gray,,Smarsheet,1d,3/15/2022,3/16/2022,,1211FF,,,,1096,1094
Yellow,,FlatSat (Rev Bs) Work,43d,12/1/2021,1/31/2022,,,,,,1097,1073
Yellow,,"Rev Bs: MCB + Motors, Tx2i + IF, OBC + IF[A], Sun S, NSS Em, EPSM Em, WiFi",38d,12/1/2021,1/21/2022,,,Assembly time?AVI Smartsheet 1.5+ month later,,,1098,1097
Yellow,,Miro,0,12/1/2021,12/1/2021,,,,,,1099,1098
Gray,,Smartsheet: Above Boards finish Rev B Testing (except OBC IF Rev A),1d,1/21/2022,1/21/2022,,"596, 681, 661, 632, 680","Assembly Time?AVI Predecessor doesn't include Tx2i, OBC, NSS Em, or EPSM Em, OBC WiFi",,,1100,1098
Gray,,"Rev Bs: PS, HC, LIFe, OBC IF",8d,12/31/2021,1/11/2022,,,Assembly time?AVI Smartsheet 1+ week later,,,1101,1097
Gray,,Miro,0,12/31/2021,12/31/2021,,,,,,1102,1101
Gray,,Smartsheet: Above Boards finish Rev B Testing,1d,1/11/2022,1/11/2022,,"682, 622, 635",Assembly Time?AVI Does not include OBC WiFi?AVI,,,1103,1101
Gray,,Full Avionics (Rev Bs) ready for Software,6d,1/15/2022,1/21/2022,,,Assembly time?AVI Smartsheet 1+ week later,,,1104,1097
Gray,,Miro,0,1/15/2022,1/15/2022,,,,,,1105,1104
Gray,,Smartsheet: All Boards finish Rev B Testing,1d,1/21/2022,1/21/2022,,"596, 609, 622, 635, 648, 661, 682",Includes boards only?AVI Need granularity on HC&PS?AVI,,,1106,1104
Gray,,First Flight Software Installation,23d,12/28/2021,1/31/2022,,,Matches,,,1107,1097
Gray,,Miro,0,1/31/2022,1/31/2022,,,,,,1108,1107
Gray,,Smartsheet (Release 1 Installation - Morphin),0,12/28/2021,12/28/2021,,1222FF,"Actually says Morphin installation, but using for FlatSat here?SOF",,,1109,1107
Gray,,End of FlatSat,0,1/31/2022,1/31/2022,,,,,,1110,1097
Green,,LOAF (Rev Cs) on Proto Rover,201d,6/14/2021,3/22/2022,,,,,,1111,1073
Gray,,"""EDU Wire Harness Need-By""",0,2/10/2022,2/10/2022,,,,,,1112,1111
Gray,,Full Avionics Rev C ready for Software,12d,2/10/2022,2/25/2022,,,Assembly time?AVI Smartsheet 2+ weeks later,,,1113,1111
Gray,,Miro,0,2/10/2022,2/10/2022,,,,,,1114,1113
Gray,,Smartsheet: All Boards finish Rev C Testing,1d,2/25/2022,2/25/2022,,"599, 612, 625, 638, 651, 664, 682",Includes boards only?AVI Need granularity on HC&PS?AVI,,,1115,1113
Green,,NSS ETU-1 Test 1,192d,6/14/2021,3/10/2022,,,Bad Smartsheet date?OPS,,,1116,1111
Gray,,Miro,0,3/10/2022,3/10/2022,,,,,,1117,1116
Red,,Smartsheet,0,6/14/2021,6/14/2021,,1199FF,,,,1118,1116
Gray,,Rev F Boards Done,16d,3/1/2022,3/22/2022,,,Smartsheet 3+ weeks later,,,1119,1111
Gray,,Miro,0,3/1/2022,3/1/2022,,,,,,1120,1119
Gray,,Smartsheet (done Rev F testing),1d,3/22/2022,3/22/2022,,"600, 614, 627, 640, 653, 666, 682",,,,1121,1119
Gray,,Clean Room LOAF,23d,3/1/2022,3/31/2022,,,,,,1122,1073
Gray,,Starts,0,3/1/2022,3/1/2022,,,,,,1123,1122
Gray,,"Full Avionics Rev F, NSS, EPSM2, Batteries, Solar",10d,3/10/2022,3/23/2022,,,Assembly time?AVI Smartsheet 2+ weeks later,,,1124,1122
Gray,,Miro,0,3/10/2022,3/10/2022,,,,,,1125,1124
Gray,,Smartsheet,1d,3/23/2022,3/23/2022,,"1121, 668, 671, 959",Dependencies use EPSM[no 2] and don't include NSS,,,1126,1124
Gray,,NSS ETU-1 Test 2,2d,3/20/2022,3/21/2022,,,"Miro matches Smartsheet, but Smartsheet appears to use Rev Bs (I thought Miro was saying Rev Fs?) Also there's a broken predecessor in the Smartsheet?AVI",,,1127,1122
Gray,,Miro,0,3/20/2022,3/20/2022,,,,,,1128,1127
Gray,,Smartsheet,0,3/21/2022,3/21/2022,,1200FF,,,,1129,1127
Gray,,Software Checkout,23d,3/1/2022,3/31/2022,,,,,,1130,1122
Gray,,Load Software,11d,3/1/2022,3/15/2022,,,Matches,,,1131,1130
Gray,,Miro,1d,3/15/2022,3/15/2022,,,,,,1132,1131
Gray,,Smartsheet (Release 3 Protoflight Install),1d,3/1/2022,3/1/2022,,1223FF,,,,1133,1131
Gray,,Miro: Camera Focusing [no matching Smarsheet SOF task?],3d,3/16/2022,3/18/2022,,1132,,,,1134,1130
Gray,,Miro: Software Checkout (except on-Rover tasks) [no matching Smartsheet SOF task?],9d,3/21/2022,3/31/2022,,1134,"Captured in the VVFs, but these are not SME-set yet",,,1135,1130
Gray,,Assembled Rover,40.5d,3/14/2022,5/9/2022,,,No matching Smartsheet task for these SOF tasks?SOF,,,1136,1073
Gray,,Miro: Load SW (potential) [no matching Smartsheet SOF task?],1d,4/10/2022,4/10/2022,,,,,,1137,1136
Gray,,Camera Calibration [no matching Smartsheet SOF task?],24.5d,3/14/2022,4/15/2022,,,,,,1138,1136
Gray,,Miro,1w,4/11/2022,4/15/2022,,1137,,,,1139,1138
Gray,,Smartsheet - MEC dependencies only,1d,3/14/2022,3/15/2022,,1215FF,,,,1140,1138
Gray,,Coordinate Frame Checking & Sun Sensor Checkout [no matching Smartsheet SOF task?],4d,4/18/2022,4/21/2022,,1139,,,,1141,1136
Gray,,Communications Links Checkout  [no matching Smartsheet SOF task?],2d,4/22/2022,4/25/2022,,1141,,,,1142,1136
Gray,,Load Testing  [no matching Smartsheet SOF task?],2w,4/26/2022,5/9/2022,,1142,,,,1143,1136
Red,,,,,,,,,,,1144,1056
Gray,,11/23/21 AI&T Flow Overview:,98.375d,3/9/2022,7/25/2022,,,,,,1145,1056
Gray,,Protoflight Loaf Mechanically Ready,0,3/9/2022,3/9/2022,,931FF,,,,1146,1145
Gray,,Protoflight Radiator Mechanically Ready,0,3/9/2022,3/9/2022,,931FF,,,,1147,1145
Gray,,Protoflight Chassis Mechanically Ready,0,3/9/2022,3/9/2022,,931FF,,,,1148,1145
Gray,,Rev F Boards Done Individual Testing,0,3/21/2022,3/21/2022,,"600, 614, 627, 640, 653, 666, 682",,,,1149,1145
Gray,,Integrate Rev F Boards into LOAF,15d,3/22/2022,4/11/2022,,"1146, 1149",,,,1150,1145
Gray,,Software Checkout on LOAF,15d,4/12/2022,5/2/2022,,1150,,,,1151,1145
Gray,,Rover Bolt-Up,7d,5/3/2022,5/11/2022,,1151,,,,1152,1145
Gray,,Software Checkout of Rover,4w,5/12/2022,6/8/2022,,1152,,,,1153,1145
Gray,,EM MLI Installation,3d,6/9/2022,6/13/2022,,1153,,,,1154,1145
Gray,,EMI/EMC Qualification,10d,6/14/2022,6/27/2022,,1154,,,,1155,1145
Gray,,TVAC Qualification,10d,6/28/2022,7/11/2022,,1155,,,,1156,1145
Gray,,EM MLI Removal,1d,7/12/2022,7/12/2022,,1156,,,,1157,1145
Gray,,Vibe Qualification,5d,7/13/2022,7/19/2022,,1157,,,,1158,1145
Gray,,Flight MLI Installation,3d,7/20/2022,7/22/2022,,1158,,,,1159,1145
Gray,,Flight Inspection,1d,7/25/2022,7/25/2022,,1159,,,,1160,1145
Red,,,,,,,,,,,1161,1056
Green,0%,Tim Notes:,76d,11/23/2021,3/8/2022,,,**Dates set to trigger late task filter.,,,1162,1056
Red,0%,Assembly of Chassis,0,11/23/2021,11/23/2021,,,"Can start next week if bandwidth (finalize changed bolt holes, design cut & trim templates, make templates)",,,1163,1162
Red,0%,Shell Prep & Bonding,0,11/23/2021,11/23/2021,,,,,,1164,1163
Red,0%,Enter Cleanroom Milestone,0,11/23/2021,11/23/2021,,1164,,,,1165,1163
Red,0%,Thermal Film Lining,0,11/23/2021,11/23/2021,,1165,,,,1166,1163
Red,0%,"Prep & Bonding of Wheel Modules, Motor Slide-In",0,11/23/2021,11/23/2021,,1166,,,,1167,1163
Green,0%,Assembly of Radiator,17d,11/23/2021,12/15/2021,,,parallel with chassis,,,1168,1162
Green,0%,Radiator Fabrication [already a task],1w,11/23/2021,11/29/2021,,,"Can start as soon as loaf mechanical integration is settled, not critical path at that point though -- loaf is the CP",,,1169,1168
Yellow,0%,Install Radiator Thermal Film [probably in existing task],1d,11/30/2021,11/30/2021,,1169,,,,1170,1168
Yellow,0%,"Mount NSSDPM, Tx2i, and IMU",2d,12/1/2021,12/2/2021,,1170,,,,1171,1168
Yellow,0%,Assemble Chassis Stiffeners on Fixture Plate,2d,12/3/2021,12/6/2021,,1171,,,,1172,1168
Yellow,0%,Mount NSS on Fixture Plate (before NSS team arrives),0.5d,12/7/2021,12/7/2021,,1172,,,,1173,1168
Yellow,0%,Flip NSS Plate to Radiator (before NSS team arrives),1d,12/7/2021,12/8/2021,,1173,Almost at any point for NSS mechanical integration.,,,1174,1168
Yellow,0%,Assemble Loaf and Ensure Fully Integrated System [in AVI AI&T parent],TBD,12/8/2021,12/8/2021,,1174,AVI parallel until here,,,1175,1168
Yellow,0%,Fixturing/Tape-Up for Loaf,0.5d,12/8/2021,12/8/2021,,1175,Needs prove-out task. **Say Loaf.,,,1176,1168
Yellow,0%,Bolt On Loaf,1d,12/9/2021,12/9/2021,,1176,This is the Assembly/Integration concern,,,1177,1168
Yellow,0%,Install & Troubleshoot & Checkout Wire Harnessing,4d,12/10/2021,12/15/2021,,1177,,,,1178,1168
Gray,0%,Full System Test on Assembly Stand,TBD,12/16/2021,12/15/2021,,1178,,,,1179,1168
Green,0%,Chassis & Radiator Integration,17d,11/23/2021,12/15/2021,,,,,,1180,1162
Gray,0%,Bolt Radiator to Lower Chassis,short,12/16/2021,12/15/2021,,"1167, 1179",,,,1181,1180
Gray,0%,Integrate Solar Actuator,short,12/16/2021,12/15/2021,,1181,,,,1182,1180
Gray,0%,Install Camera Shrouds,short,12/16/2021,12/15/2021,,1182,"After bench testing, etc",,,1183,1180
Red,0%,Install EDU(?) MLI (Minnesota),3d,11/23/2021,11/25/2021,,,"EDU MLI for thermal and EMI/EMC, off for vibe, Flight MLI last (at CMU?)",,,1184,1180
Red,0%,Drive to Minnesota,1.25d,11/23/2021,11/24/2021,,,,,,1185,1184
Red,0%,Actual MLI Install in Minnesota,0.5d,11/24/2021,11/24/2021,,1185,,,,1186,1184
Red,0%,Drive to CMU,1.25d,11/24/2021,11/25/2021,,1186,,,,1187,1184
Green,0%,Solar Panel Integration,76d,11/23/2021,3/8/2022,,,,,,1188,1162
Red,0%,Install Thermal Films,0,11/23/2021,11/23/2021,,,,,,1189,1188
Gray,0%,Send Substrate to Pumpkin [already a task],0,3/7/2022,3/7/2022,,"1189, 958FF",,,,1190,1188
Gray,0%,Receive & QA Flight Panel [already a task],0,3/8/2022,3/8/2022,,"1013, 882F",,,,1191,1188
Gray,0%,Test Fit & Removal,short,3/8/2022,3/8/2022,,1191,,,,1192,1188
Red,0%,Protoflight Rover Integrated,0,,,,,,,,1193,1162
Green,4%,Avionics Integration,226d,6/14/2021,4/25/2022,Lydia Schweitzer,,,,,1194,1056
Gray,0%,Boards stacked with thermal shields,20d,3/8/2022,4/4/2022,Lydia Schweitzer,,Weird task name?AVI. Is this happening before boards are ready?SYS,,,1195,1194
Gray,0%,Loaf,20d,3/8/2022,4/4/2022,Lydia Schweitzer,"613, 587, 1013",,,,1196,1195
Gray,0%,Bolt components to radiator,5d,4/5/2022,4/11/2022,Lydia Schweitzer,"1196, 667",,,,1197,1194
Green,5%,Integrate NSS,221d,6/14/2021,4/18/2022,Lydia Schweitzer,,,,,1198,1194
Gray,100%,NSS ETU-1 Test 1,1d,6/14/2021,6/14/2021,Lydia Schweitzer,,"Bad date, no dependencies?OPS",,,1199,1198
Gray,0%,NSS ETU-1 Test 2,1d,3/21/2022,3/21/2022,Lydia Schweitzer,"591, 604, 617, #REF, 630, 656",Broken Predecessor?OPS,,,1200,1198
Gray,0%,NSS Flight Unit Integration,20d,3/22/2022,4/18/2022,Lydia Schweitzer,,,,,1201,1198
Gray,0%,Integration procedures complete,5d,3/22/2022,3/28/2022,Lydia Schweitzer,1200,,,,1202,1201
Gray,0%,NSS/MR Training,5d,4/12/2022,4/18/2022,Lydia Schweitzer,1197,,,,1203,1201
Gray,0%,NSS ETU-1 Test 3,2d,4/12/2022,4/13/2022,Lydia Schweitzer,1197,,,,1204,1201
Gray,0%,NSS Flight Unit Integration,3d,4/14/2022,4/18/2022,Lydia Schweitzer,1204,,,,1205,1201
Gray,0%,Installation of heaters,5d,4/19/2022,4/25/2022,Lydia Schweitzer,"1197, 1205",,,,1206,1194
Gray,0%,Wire Harnessing,46d,1/11/2022,3/15/2022,Tim Angert,,,,,1207,1056
Gray,0%,Installation of harnesses on protoflight build,1d,1/11/2022,1/11/2022,Tim Angert,"622, #REF, 730",Really 1d?SYS Linked to parent (658)?SYS,,,1208,701
Gray,0%,Install wire harness on solar panel,5d,3/9/2022,3/15/2022,Tim Angert,959,,,,1209,701
Gray,0%,Mechanical Integration,34.5d,3/9/2022,4/26/2022,"Daniel Scher, Tim Angert",,"(OLD), see 871",,,1210,1056
Gray,0%,Assembly of Wheel Module,5d,3/9/2022,3/16/2022,Tim Angert,926,Linked to parent?SYS,,,1211,1210
Gray,0%,Attachment of wheel module to chassis,3d,3/16/2022,3/21/2022,Daniel Scher,1211,,,,1212,1210
Gray,0%,Radiator Build,34.5d,3/9/2022,4/26/2022,Daniel Scher,,,,,1213,1210
Gray,0%,Integrate camera modules and line lasers,1d,3/9/2022,3/10/2022,Daniel Scher,926,,,,1214,1213
Gray,0%,Perception hardware calibration,3d,3/10/2022,3/15/2022,Daniel Scher,1214,,,,1215,1213
Gray,0%,Radiator complete,1d,4/26/2022,4/26/2022,Daniel Scher,"1215, 1206",,,,1216,1213
Gray,0%,Assembly of Solar Actuator,5d,3/9/2022,3/16/2022,Tim Angert,926,,,,1217,1210
Gray,0%,Installation of Solar Panel,5d,3/16/2022,3/23/2022,Tim Angert,"1217, 1209",,,,1218,1210
Gray,0%,Thermal Integration,3d,5/30/2022,6/2/2022,Tim Angert,,,,,1219,1056
Gray,0%,Thermal film installation,3d,5/30/2022,6/2/2022,Tim Angert,1237,,,,1220,1219
Gray,0%,Software Integration,94d,12/15/2021,4/25/2022,,,,,,1221,1056
Gray,0%,Flight Software Release 1 - Morphin,10d,12/15/2021,12/28/2021,tenzinc@andrew.cmu.edu,965,,,,1222,1221
Gray,0%,Flight Software Release 2 - Morphin,10d,2/16/2022,3/1/2022,tenzinc@andrew.cmu.edu,993,,,,1223,1221
Gray,0%,Flight Software Release 3 - Morphin,10d,2/18/2022,3/3/2022,tenzinc@andrew.cmu.edu,1004,,,,1224,1221
Gray,0%,Flight Software Release 3 - Flatsat install,10d,2/18/2022,3/3/2022,tenzinc@andrew.cmu.edu,"622, 1004",Wrong Preds?SOF,,,1225,1221
Gray,0%,Flight Software Release 3 - Protoflight install,10d,4/12/2022,4/25/2022,tenzinc@andrew.cmu.edu,"1197, 1004",,,,1226,1221
Gray,0%,Flight Unit Assembly / MLI,73.5d,2/28/2022,6/9/2022,"Paulo R.M.Fisch, Tim Angert",,,,,1227,1056
Gray,0%,Mass Reduction Deadlines,40.5d,2/28/2022,4/25/2022,,,,,,1228,1227
Gray,0%,Loaf Mass Cut Deadline (Manufacturing),0,2/28/2022,2/28/2022,,,Dependency?MEC (Dan's manual date estimate),,,1229,1228
Gray,0%,Camera Mount Mass Cut Deadline (Production Contingency),0,3/22/2022,3/22/2022,,1231FS -4w,,,,1230,1228
Gray,0%,Camera Mount Mass Cut Deadline (Installation),0,4/19/2022,4/19/2022,,1235FF -1w,,,,1231,1228
Gray,0%,Line Laser Mass Cut Deadline (Installation),0,4/19/2022,4/19/2022,,1235FF -1w,,,,1232,1228
Gray,0%,Wheel Mass Cut Deadline 1 (Installation),0,4/19/2022,4/19/2022,,1235FF -1w,,,,1233,1228
Gray,0%,Wheel Mass Cut Deadline 2 (Installation),0,4/25/2022,4/25/2022,,1235FF -1d,,,,1234,1228
Gray,0%,Completion of all Physical Subsystem Integrations,0.5d,4/26/2022,4/26/2022,Tim Angert,1206,**This needs to move backward from 4/15/22 to move Vibe before SIR.?MEC,,,1235,1227
Gray,0%,EM MLI Installation,1d,4/26/2022,4/27/2022,"MR ProtoFlight Model, Paulo R.M.Fisch, Tim Angert",1235,,,,1236,1227
Gray,0%,EM MLI Removal,3d,5/25/2022,5/30/2022,"MR ProtoFlight Model, Paulo R.M.Fisch, Tim Angert",1346,After TVAC,,,1237,1227
Gray,0%,FM MLI Installation,3d,6/6/2022,6/9/2022,"MR ProtoFlight Model, Paulo R.M.Fisch, Tim Angert",1345,After Vibe/Shock,,,1238,1227
Green,23%,6.0 System Testing,286d,5/11/2021,6/14/2022,,,,,,1239,1
Gray,0%,Paper Mission 3,10d,2/16/2022,3/1/2022,,"1053, 993, 1025",Isn't this 11/3/21?OPS,,,1240,1239
Green,13%,Rev3 VV Activities (no MOP):,266d,6/8/2021,6/14/2022,,,,,,1241,1239
Gray,0%,Joint Masten VVs,33d,2/15/2022,3/31/2022,,,,,,1242,1241
Red,,VVMC-LPC Lander Power Control Interfacing [new],,,,,,,,,1243,1242
Gray,0%,VVM-COMM Communications Interfacing,33d,2/15/2022,3/31/2022,,,,,,1244,1242
Gray,0%,Write Test Plan,4w,2/15/2022,3/14/2022,,1246SF,,,,1245,1244
Gray,0%,Conduct Test (includes non-parallel travel),3d,3/15/2022,3/17/2022,,Unknown,"Suggested March 2022, unknown duration",,,1246,1244
Gray,0%,Write Test Report,2w,3/18/2022,3/31/2022,,1246,,,,1247,1244
Gray,0%,VVM-HDRM Stowage & Deployment Interfacing,33d,2/15/2022,3/31/2022,,,,,,1248,1242
Gray,0%,Write Test Plan,4w,2/15/2022,3/14/2022,,1250SF,,,,1249,1248
Gray,0%,Conduct Test (includes non-parallel travel),3d,3/15/2022,3/17/2022,,Unknown,,,,1250,1248
Gray,0%,Write Test Report,2w,3/18/2022,3/31/2022,,1250,,,,1251,1248
Gray,0%,VVM-PCDHU Masten PCDHU Interfacing,33d,2/15/2022,3/31/2022,,,,,,1252,1242
Gray,0%,Write Test Plan,4w,2/15/2022,3/14/2022,,1254SF,,,,1253,1252
Gray,0%,Conduct Test (includes non-parallel travel),3d,3/15/2022,3/17/2022,,Unknown,"Suggested March 2022, unknown duration",,,1254,1252
Gray,0%,Write Test Report,2w,3/18/2022,3/31/2022,,1254,,,,1255,1252
Green,0%,VVs with Already-Complete Predecessors:,112d,11/22/2021,4/26/2022,,,,,,1256,1241
Green,0%,VV-ANA-PLASMA Charged Particle Survivability,112d,11/22/2021,4/26/2022,,409FF,,,,1257,1256
Green,0%,VV-ANA-RAD Radiation Susceptibility,112d,11/22/2021,4/26/2022,,409FF,,,,1258,1256
Green,0%,VV-ANA-SAFE Safety Analysis,112d,11/22/2021,4/26/2022,Siri Maley,409FF,,,,1259,1256
Green,0%,VV-ANA-ACOUSTIC Acoustic Susceptibility,112d,11/22/2021,4/26/2022,,409FF,,,,1260,1256
Yellow,0%,VV-ANA-VENT Pressure Venting,96.5d,11/30/2021,4/13/2022,,,,,,1261,1256
Yellow,0%,Analysis,5d,11/30/2021,12/6/2021,,749FF,,,,1262,1261
Gray,0%,Reporting,1w,4/6/2022,4/13/2022,,"1218FS +2w, 1262",,,,1263,1261
Green,0%,VV-MOBILITY Mobility Demonstration,112d,11/22/2021,4/26/2022,,409FF,,,,1264,1256
Green,0%,VV-PEEL Solar Panel Peel-Off Test,112d,11/22/2021,4/26/2022,,409FF,,,,1265,1256
Red,0%,VVs That are only FF with Final Designs?:,,,,,,,,,1266,1241
Red,0%,VV-ANA-POW Power ConOps,,,,,Final POW Design,,,,1267,1266
Red,0%,VV-ANA-THEL Operating Temperatures,,,,,Final Component PNs?,,,,1268,1266
Red,0%,VV-ANA-THERMAL Thermal ConOps,,,,,Final Thermal Design,,,,1269,1266
Red,0%,VV-SIM-AUTO Autonomy Simulation (to evaluate if redundant),,,,,Final Auton Design?,,,,1270,1266
Gray,0%,FlatSat VVs (what are the post-FlatSat needs here?):,17d,3/18/2022,4/11/2022,,,,,,1271,1241
Red,0%,VV-FLATSAT-NSS NSS Interfacing on FlatSat,3d,,,,,,,,1272,1271
Gray,,VV-FLATSAT-COMM 1 Communications Interfacing on FlatSat,5d,3/18/2022,3/24/2022,,1225FS +10d,,,,1273,1271
Gray,,VV-FLATSAT-COMM 2 Lander Communications Interfacing on FlatSat,10d,3/29/2022,4/11/2022,,"#REF, 623?, 649?, 675?",,,,1274,1271
Red,0%,VV-FLATSAT-ACT Actuation on FlatSat,,,,,,,,,1275,1271
Red,0%,VV-FLATSAT-DATA Data on FlatSat,5d,,,,,,,,1276,1271
Red,0%,VV-FLATSAT-HEAT Heating on FlatSat,,,,,,,,,1277,1271
Red,0%,VV-FLATSAT-PERCEP Perception on FlatSat,10d,,,,,,,,1278,1271
Red,0%,VV-FLATSAT-POW Power on FlatSat,,,,,,,,,1279,1271
Red,0%,VV-FLATSAT-FAULT Fault Recovery (HW & SW) on FlatSat,7d,,,,,,,,1280,1271
Red,0%,VV-FLATSAT-VOLT Voltage Monitoring & Protection,5d,,,,,,,,1281,1271
Red,,VV-FLATSAT-EMI FlatSat (Boards) EMI Probing,,,,,,,,,1282,1271
Red,,VV-FLATSAT-TVAC FlatSat  (Boards) TVAC Risk Reduction,,,,,,,,,1283,1271
Gray,0%,Morphin VVs:,45d,3/4/2022,5/5/2022,,,,,,1284,1241
Red,0%,VV-MORPHIN-WIFI Wireless Range,5d,,,1051?,,,,,1285,1284
Gray,0%,VV-MSG Message Pipeline,10d,3/4/2022,3/17/2022,,"1224, 1055",,,,1286,1284
Gray,0%,VV-TELEOP Teleoperation,5d,3/18/2022,3/24/2022,,"1224, 1055, 1286",,,,1287,1284
Gray,0%,VV-LOCAL Local Planning,10d,3/4/2022,3/17/2022,,1224,,,,1288,1284
Gray,0%,VV-AUTO Autonomous Surface Operations,30d,3/25/2022,5/5/2022,,"1224, 1286, 1287, 1288",,,,1289,1284
Gray,0%,VV-POS Position Estimation,10d,3/4/2022,3/17/2022,,1224,,,,1290,1284
Red,0%,VV-IMAGE Camera Imaging in Lunar Terrain,10d,,,,,,,,1291,1284
Green,40%,Other Pre-Integration / Off-Rover VVs:,191d,6/8/2021,3/1/2022,,,,,,1292,1241
Red,,,,,,,,,,,1293,1292
Green,43%,VV-THERMEXP Thermal Expansion,191d,6/8/2021,3/1/2022,,,,,,1294,1292
Gray,100%,Carbon Fiber - Aluminum,83d,6/8/2021,9/30/2021,,403FS +20d,,,,1295,1294
Green,0%,Remaining Content,108d,10/1/2021,3/1/2022,,1295,,,,1296,1294
Gray,0%,VV-ANA-REGO Regolith Susceptibility,15d,12/29/2021,1/18/2022,,,,,,1297,1292
Gray,0%,Optical Regolith Protection Test,10d,12/29/2021,1/11/2022,"Saksham Khurana, tenzinc@andrew.cmu.edu, Tim Angert",731,,,,1298,1297
Gray,0%,Finish VV Report,1w,1/12/2022,1/18/2022,,1298,,,,1299,1297
Gray,0%,VVs with Unknown Approach:,56d,12/29/2021,3/16/2022,,,,,,1300,1241
Red,0%,VV-DEPLOY Deployment Sequence Demonstration with Solar Panel (needed?),,,,,,,,,1301,1300
Gray,0%,VV-STOW Stow/Deploy (1.2m @ 95%),56d,12/29/2021,3/16/2022,,731,,,,1302,1300
Red,0%,VV-ISO Lander Electrical & Thermal Isolation,,,,,,,,,1303,1300
Red,,VV-UKN-LONG Long-Run Bench Test,,,,,,,,,1304,1300
Red,0%,VV-REGRESS Software Regression Testing (should this be a VV?),,,,,,,,,1305,1300
Gray,0%,VVs Complete in Course of Work:,97d,12/13/2021,4/27/2022,,,,,,1306,1241
Gray,0%,VV-ANA-ASSY CAD Lock Analysis,1w,12/13/2021,12/20/2021,,751,,,,1307,1306
Red,0%,VV-ASSY Successful Assembly Inspection,0,,,,1193,,,,1308,1306
Gray,0%,VV-ANA-DOCS SIR Documentation Deliverables,0,4/27/2022,4/27/2022,,"473, 503, 507, 513, 519, 525",,,,1309,1306
Gray,0%,VV Campaign on Complete Protoflight System:,55d,3/30/2022,6/14/2022,,,,,,1310,1241
Gray,,Fixturing Procurement,0,3/31/2022,3/31/2022,,,,,3000,1311,1310
Red,0%,VV-OUTGAS Bakeouts,,,,,,,,,1312,1310
Red,0%,Batch 1,,,,,,,,,1313,1312
Red,0%,Batch 2 ...,,,,,,,,,1314,1312
Red,,Avionics-Software Protoflight VVs,,,,,,,,,1315,1310
Red,,VVF-POW Power Handling,,,,,,,,,1316,1315
Red,,VVF-DATA Data Handling,5d,,,,"1308, 1226",,,,1317,1315
Red,,VVF-COMM Communications,,,,,,,,,1318,1315
Red,,VVF-VOLT Voltage Monitoring & Protection?,5d,,,,"1308, 1226",,,,1319,1315
Red,,VVF-FAULT Fault Recovery?,7d,,,,"1308, 1226",,,,1320,1315
Red,,VVF-PERCEP Perception?,10d,,,,"1308, 1226",,,,1321,1315
Red,,VVF-ACT Actuation,,,,,,,,,1322,1315
Red,,VVF-HEAT Heating,,,,,,,,,1323,1315
Gray,0%,VVF-EMI EMI/EMC Qualification,40d,3/30/2022,5/24/2022,,,,,,1324,1310
Gray,0%,Write Test Plan,4w,3/30/2022,4/26/2022,,1326SF,,,,1325,1324
Gray,0%,Conduct Test (includes non-parallel travel),10d,4/27/2022,5/10/2022,"MR ProtoFlight Model, Paulo R.M.Fisch, Tim Angert",1216,,,11000,1326,1324
Gray,0%,Write Test Report,2w,5/11/2022,5/24/2022,,1326,,,,1327,1324
Gray,0%,VVF-TVAC Thermal Vacuum Qualification,40d,4/13/2022,6/7/2022,,,,,,1328,1310
Gray,0%,Write Test Plan,4w,4/13/2022,5/10/2022,,1330SF,,,,1329,1328
Gray,0%,Conduct Test (includes non-parallel travel),10d,5/11/2022,5/24/2022,"MR ProtoFlight Model, Paulo R.M.Fisch, Tim Angert",1326,,,19750,1330,1328
Gray,0%,Write Test Report,2w,5/25/2022,6/7/2022,,1330,,,,1331,1328
Gray,0%,EM MLI Removal,3d,5/25/2022,5/27/2022,"MR ProtoFlight Model, Paulo R.M.Fisch, Tim Angert",1330,,,,1332,1310
Gray,0%,VVF-VIBE Vibration & Shock Qualification,35d,4/27/2022,6/14/2022,,,,,,1333,1310
Gray,0%,Write Test Plan,4w,4/27/2022,5/24/2022,,1335SF,,,,1334,1333
Gray,0%,Conduct Test (includes non-parallel travel),5d,5/25/2022,5/31/2022,"MR ProtoFlight Model, Paulo R.M.Fisch, Tim Angert",1330,,,11875,1335,1333
Gray,0%,Write Test Report,2w,6/1/2022,6/14/2022,,1335,,,,1336,1333
Gray,0%,FM MLI Installation,3d,6/2/2022,6/7/2022,"MR ProtoFlight Model, Paulo R.M.Fisch, Tim Angert",1219,,,,1337,1310
Red,0%,VVF-FLIGHT Delivery-in-Place Inspection,1d,,,"MR ProtoFlight Model, Paulo R.M.Fisch, Tim Angert",,,,,1338,1310
Green,34%,V&V Testing,283.5d,5/11/2021,6/10/2022,,,,,,1339,1239
Gray,0%,VVs Complete by Pre-SIR Internal Deliverables Deadline,0,5/11/2022,5/11/2022,,"1342, 1344, 1347, 1348, 1349, 1350, 1351, 1352, 1354, 1355, 1356, 1357, 1358, 1359, 1360, 1361, 1362, 1363, 1364, 1365, 1366, 1367, 1368, 1369, 1370, 1371, 1372, 1373, 1374, 1375, 1298, 1377, 1378, 1380, 1381, 1382, 1383, 1385, 1387",Use instead of linking to parent,,,1340,1339
Gray,0%,All VVs Complete (instead of linking to parent),0,6/10/2022,6/10/2022,,"1342, 1343, 1344, 1345, 1346, 1347, 1348, 1349, 1350, 1351, 1352, 1353, 1355, 1356, 1357, 1358, 1359, 1360, 1361, 1362, 1363, 1364, 1365, 1366, 1367, 1368, 1369, 1370, 1371, 1373, 1374, 1375, 1298, 1377, 1378, 1379, 1380, 1381, 1382, 1383, 1385, 1387",Use instead of linking to parent,,,1341,1339
Gray,100%,VV-01 Mobility Test,10d,5/18/2021,5/31/2021,Daniel Scher,570,,,,1342,1339
Gray,0%,VV-02 Flight MoonRanger Configuration Inspection,1d,6/9/2022,6/10/2022,"MR ProtoFlight Model, Warren Whittaker",1238,After flight MLI. **Minimize Reqs in this VV?SYS,,,1343,1339
Gray,0%,VV-03 EMI/EMC (Hardware Testing),10d,4/27/2022,5/11/2022,MR ProtoFlight Model,1236,After install of EM MLI.,,,1344,1339
Gray,0%,VV-05 Vibe & Shock (Hardware Testing),5d,5/30/2022,6/6/2022,MR ProtoFlight Model,1237,After EM MLI removal.,,,1345,1339
Gray,0%,VV-06 TVAC (Hardware Testing),10d,5/11/2022,5/25/2022,MR ProtoFlight Model,1344,after EMI/EMC.,,,1346,1339
Gray,100%,VV-07 Perception Capability,79d,5/11/2021,8/27/2021,tenzinc@andrew.cmu.edu,,,,,1347,1339
Gray,100%,Perception in lunar lighting,20d,8/2/2021,8/27/2021,tenzinc@andrew.cmu.edu,"403, 1349",,,,1348,1347
Gray,100%,Stereo Deflection Test,59d,5/11/2021,7/30/2021,tenzinc@andrew.cmu.edu,403,Is this truly done?SYS Requirement does not seem to be verified given the ongoing work with titanium bracketry.,,,1349,1347
Gray,0%,VV-08 Position Estimation,10d,3/4/2022,3/17/2022,tenzinc@andrew.cmu.edu,1224,,,,1350,1339
Gray,0%,VV-09 Wireless Communication,5d,4/26/2022,5/3/2022,Saksham Khurana,1235,,,,1351,1339
Gray,0%,VV-10 Lander Communication Interfacing,5d,3/18/2022,3/24/2022,"Saksham Khurana, tenzinc@andrew.cmu.edu",1225FS +10d,,,,1352,1339
Gray,0%,VV-11 Fault Recovery,7d,5/17/2022,5/25/2022,"Saksham Khurana, tenzinc@andrew.cmu.edu",1226FS +15d,,,,1353,1339
Gray,0%,"VV-12	Outgassing Analysis",44.5d,1/12/2022,3/15/2022,,,,,,1354,1339
Gray,0%,Component Level Bakeout,44.5d,1/12/2022,3/15/2022,Tim Angert,,,,,1355,1354
Gray,0%,Flight Motors,5d,3/8/2022,3/15/2022,Tim Angert,1235FS -35d,,,,1356,1355
Gray,0%,Flight Antenna,5d,3/8/2022,3/15/2022,Tim Angert,1235FS -35d,,,,1357,1355
Gray,0%,Flight Solar Panel,5d,3/8/2022,3/15/2022,Tim Angert,1235FS -35d,,,,1358,1355
Gray,0%,Flight Cameras,5d,3/8/2022,3/15/2022,Tim Angert,1235FS -35d,,,,1359,1355
Gray,0%,Flight & EM MLI,5d,3/8/2022,3/15/2022,Tim Angert,1235FS -35d,here by Sept <- comment is incorrect?MEC,,,1360,1355
Gray,0%,Flight Sandwich Panel - For Radiator,5d,3/8/2022,3/15/2022,Tim Angert,1235FS -35d,,,,1361,1355
Gray,0%,Flight Sandwich Panel - For Solar,5d,3/8/2022,3/15/2022,Tim Angert,1235FS -35d,,,,1362,1355
Gray,0%,Flight DC-DC Converter,5d,3/8/2022,3/15/2022,Tim Angert,1235FS -35d,,,,1363,1355
Gray,0%,Flight Wire Harness,5d,1/12/2022,1/18/2022,Tim Angert,#REF,here by Sept <- comment is incorrect?MEC,,,1364,1355
Gray,0%,VV-13 Memory & Data Storage & Comms,5d,4/26/2022,5/2/2022,"James Teza, tenzinc@andrew.cmu.edu",1226,,,,1365,1339
Red,0%,VV-14 Power ConOps,125d,6/1/2021,11/22/2021,Emilio,1016,349d starting 6/1/21 <- what is happening in this duration's edit history?SYS,,,1366,1339
Gray,0%,VV-15 Voltage Monitoring & Protection,5d,4/26/2022,5/3/2022,Emilio,1235,,,,1367,1339
Gray,0%,VV-16 Imaging,10d,4/26/2022,5/10/2022,tenzinc@andrew.cmu.edu,1235,,,,1368,1339
Gray,0%,VV-17 Autonomy Surface Ops,30d,3/25/2022,5/5/2022,tenzinc@andrew.cmu.edu,"1224, 1370, 1377, 1380",,,,1369,1339
Gray,0%,VV-19 Local Planning,10d,3/4/2022,3/17/2022,,1224,,,,1370,1339
Gray,100%,VV-20 NSS Data Interface,3d,6/15/2021,6/17/2021,"Lydia Schweitzer, tenzinc@andrew.cmu.edu",#REF,,,,1371,1339
Green,74%,VV-21 Regolith Protection Test,176d,5/11/2021,1/11/2022,Daniel Scher,,,,,1372,1339
Gray,100%,Wheel Module Regolith Protection Test,20d,5/11/2021,6/7/2021,,403,,,,1373,1372
Gray,100%,Chassis Regolith Seal Test,4d,5/11/2021,5/14/2021,,403,,,,1374,1372
Gray,100%,Solar Actuator Regolith Intrusion Test,5d,6/8/2021,6/14/2021,Emilio,1015,,,,1375,1372
Gray,0%,Optical Regolith Protection Test,10d,12/29/2021,1/11/2022,"Saksham Khurana, tenzinc@andrew.cmu.edu, Tim Angert",731,,,,1376,1372
Gray,0%,VV-22 Message Pipeline,10d,3/4/2022,3/17/2022,tenzinc@andrew.cmu.edu,"1224, 946, 1055",,,,1377,1339
Gray,30%,VV-23 Stow/Deploy,56d,12/29/2021,3/16/2022,Daniel Scher,731,,,,1378,1339
Gray,0%,VV-24 Comms Ground Bus,5d,5/30/2022,6/6/2022,Emilio,1237,,,,1379,1339
Gray,0%,VV-25 Teleoperation,5d,3/18/2022,3/24/2022,,"1055, 1224, 1377",,,,1380,1339
Gray,0%,VV-33 Lander Communication Interface,10d,3/29/2022,4/11/2022,tenzinc@andrew.cmu.edu,"#REF, 623, 649, 675",Broken predecessor?SOF,,,1381,1339
Gray,100%,VV-36 Thermal Expansion: CF-AL,83d,6/8/2021,9/30/2021,"Daniel Scher, Paulo R.M.Fisch",403FS +20d,,,,1382,1339
Green,0%,VV-36 Thermal Expansion: remaining content,108d,10/1/2021,3/1/2022,"Daniel Scher, Paulo R.M.Fisch",1382,**Dan's manual end date. Awaiting more tasks.?MEC,,,1383,1339
Yellow,0%,VV-38 Chassis Venting Analysis,96.5d,11/30/2021,4/13/2022,,,,,,1384,1339
Yellow,0%,Analysis,5d,11/30/2021,12/6/2021,Daniel Scher,749FF,,,,1385,1384
Gray,0%,Reporting,1w,4/6/2022,4/13/2022,,1218FS +2w,,,,1386,1384
Gray,0%,VV-39 Heater Test,10d,4/26/2022,5/9/2022,Paulo R.M.Fisch,1206,,,,1387,1339
Green,44%,7.0 System Packaging,284d,5/11/2021,6/10/2022,,,,,,1388,1
Red,44%,CONOPS,142d,5/11/2021,11/24/2021,,,,,,1389,1388
Gray,100%,"CONOPS Release A -- operations and sub operations, distance from lander, mission timing",40d,5/11/2021,7/5/2021,Lydia Schweitzer,403,,,,1390,1389
Gray,100%,"CONOPS Release B -- operating modes, data download/uplink, preliminary data amounts",21d,7/6/2021,8/3/2021,Lydia Schweitzer,1390,,,,1391,1389
Red,0%,Final communication window structure obtained from Masten lander,88d,7/15/2021,11/15/2021,Masten,,"date unknown, added as estimate",,,1392,1389
Gray,100%,CONOPS Release C -- communication windows current with Masten-defined windows,7d,11/16/2021,11/24/2021,Lydia Schweitzer,"1392, 1390",,,,1393,1389
Green,48%,Global Planning,215d,5/11/2021,3/7/2022,,,,,,1394,1388
Green,48%,Global Path Planning,215d,5/11/2021,3/7/2022,,,,,,1395,1394
Gray,100%,"Revision 0 Global Path Planning Algorithm (algorithms explored, first cut at global path planning)",30d,5/11/2021,6/21/2021,Lydia Schweitzer,403,,,,1396,1395
Gray,100%,Revision A Global Path Planning Algorithm (path between sequence of points),24d,9/28/2021,10/29/2021,Lydia Schweitzer,1396FS +70d,,,,1397,1395
Gray,100%,Revision B Global Path Planning Algorithm (incremental illumination/time variable),10d,11/1/2021,11/12/2021,Lydia Schweitzer,1397,,,,1398,1395
Gray,100%,Revision C Global Path Planning Algorithm (contingency paths),10d,11/1/2021,11/12/2021,Lydia Schweitzer,1397,,,,1399,1395
Green,0%,"Revision D Global Path Planning Algorithm (min + max time to complete path, highway)",20d,11/15/2021,12/10/2021,Lydia Schweitzer,1399,,,,1400,1395
Gray,0%,Revision E Global Path Planning Algorithm (rover energy model),60d,12/13/2021,3/4/2022,Lydia Schweitzer,1400,,,,1401,1395
Gray,0%,Final integration with Mission Control Software,1d,3/7/2022,3/7/2022,tenzinc@andrew.cmu.edu,1401,50d starting 2/21/22 <- correct duration?OPS,,,1402,1395
Gray,100%,Operator Roles for SIR,5d,11/13/2021,11/18/2021,,,"How is this 6/2/22-6/8/22 but is done already?OPS <- set to finished when was set to 100%. >>> This is not finished completely, but for what we need out of this phase of the mission, yes completed",,,1403,1388
Green,39%,Scenarios,181d,8/3/2021,4/12/2022,,,,,,1404,1388
Gray,100%,Revision A Faults Complete (includes all known faults + detection methods),70d,8/3/2021,11/8/2021,Lydia Schweitzer,403FS +60d,,,,1405,1404
Red,0%,Revision B Faults Complete (includes all mitigation strategies + mission rescope),11d,11/9/2021,11/23/2021,Lydia Schweitzer,1405,,,,1406,1404
Green,0%,"Revision C Faults Complete (includes fault isolation manual, fault tree diagrams and flow)",30d,11/24/2021,1/4/2022,Lydia Schweitzer,1406,,,,1407,1404
Gray,0%,Revision D Faults Complete (fault tree integrated in Mission Control Software),70d,1/5/2022,4/12/2022,Lydia Schweitzer,1407,,,,1408,1404
Gray,0%,Hardware Delivery,0.5d,6/10/2022,6/10/2022,,"1341, 151",Promise is 6/5/22.,,,1409,1388
